# Proyecto1 arreglo

How a schedule from MS Project changed from version to version. A marks actual dates.

## Version 1 (data date 2016-10-17, saved 2017-03-05)

Note of the change: Correcciones varias

| ID | WBS | Task | Duration | Start | Finish | Predecessors | Complete | Total float | Constraint |
| --- | --- | --- | --- | --- | --- | --- | --- | --- | --- |
| 1 | 1 | **HITO 0** | 28d | 2016-09-12 | 2016-10-19 |  |  | 0d |  |
| 2 | 1.1 | **ITERACIÓN 1** | 8d | 2016-09-12 | 2016-09-21 |  |  | 0d |  |
| 3 |  | [PM]Rellenar documento de Concepto del proyecto | 8d | 2016-09-12 | 2016-09-21 |  |  | 0d |  |
| 4 | 1.2 | **ITERACIÓN 2** | 10d | 2016-09-22 | 2016-10-05 | 2 |  | 0d |  |
| 5 |  | [PM]Rellenar versión inicial del documento Especificación | 10d | 2016-09-22 | 2016-10-05 |  |  | 0d |  |
| 6 | 1.3 | **ITERACIÓN 3** | 10d | 2016-10-06 | 2016-10-19 | 4 |  | 0d |  |
| 7 |  | [PM]Completar y revisar documento Especificación. | 5d | 2016-10-06 | 2016-10-12 |  |  | 0d |  |
| 8 |  | [PM]Elaborar el Presupuesto (hoja de cálculo) | 2d | 2016-10-13 | 2016-10-14 | 7 |  | 0d |  |
| 9 |  | [PM]Crear WBS del proyecto en Project. | 1d | 2016-10-17 | 2016-10-17 | 8 |  | 0d |  |
| 10 |  | [PM]Crear plan general (Tareas y precedencias básicas). en Project | 2d | 2016-10-18 | 2016-10-19 | 9 |  | 0d |  |
| 11 | 2 | **HITO 1** | 47d? | 2016-10-20 A | 2016-12-23 | 1 | 26% | 0d |  |
| 12 | 2.1 | **ITERACIÓN 1** | 10d? | 2016-10-20 A | 2016-11-02 A |  | 100% |  |  |
| 13 | 2.1.1 | **PM** | 10d? | 2016-10-20 A | 2016-11-02 A |  | 100% |  |  |
| 14 | 2.1.1.1 | **[PM]Planificación** | 4.21d? | 2016-10-20 A | 2016-10-26 A |  | 100% |  |  |
| 15 | 2.1.1.1.1 | **[PM]Detallar plan iteraciones del mes de Noviembre** | 4.21d? | 2016-10-20 A | 2016-10-26 A |  | 100% |  |  |
| 16 |  | Creación subtareas y precedencias en Project. | 16.33h? | 2016-10-20 A | 2016-10-24 A |  | 100% |  | start no earlier than 2016-10-20 |
| 17 |  | Asignar recursos a las tareas en Project. | 17.35h? | 2016-10-24 A | 2016-10-26 A | 16 | 100% |  |  |
| 18 | 2.1.1.2 | **[PM]Seguimiento** | 10d? | 2016-10-20 A | 2016-11-02 A |  | 100% |  |  |
| 19 |  | [PM]Regitrar de tiempos y % de realización de tareas en Project. | 80h? | 2016-10-20 A | 2016-11-02 A |  | 100% |  | finish no earlier than 2016-11-02 |
| 20 | 2.2 | **ITERACIÓN 2** | 10d | 2016-11-03 A | 2016-11-16 | 12 | 47% |  |  |
| 21 | 2.2.1 | **PM** | 10d | 2016-11-03 A | 2016-11-16 A |  | 100% |  |  |
| 22 | 2.2.1.1 | **[PM]Rellenar documento gestión de riesgos.** | 1.84d? | 2016-11-03 A | 2016-11-04 A |  | 100% |  |  |
| 23 |  | Leer documento | 1.07h | 2016-11-03 A | 2016-11-03 A |  | 100% |  | start no earlier than 2016-11-03 |
| 24 |  | Rellenar documento | 4h | 2016-11-03 A | 2016-11-03 A | 23 | 100% |  |  |
| 25 |  | Analizar documento | 3.23h? | 2016-11-03 A | 2016-11-04 A | 24 | 100% |  |  |
| 26 |  | Actulizar documento | 6.45h? | 2016-11-04 A | 2016-11-04 A | 25 | 100% |  |  |
| 27 | 2.2.1.2 | **[PM]Planificación** | 9.12d? | 2016-11-03 A | 2016-11-16 A |  | 100% |  |  |
| 28 | 2.2.1.2.1 | **[PM]Detallar plan iteraciones del mes de Noviembre** | 9.12d? | 2016-11-03 A | 2016-11-16 A |  | 100% |  |  |
| 29 |  | Creación subtareas y precedencias en Project. | 56h? | 2016-11-03 A | 2016-11-11 A |  | 100% |  | finish no earlier than 2016-11-11 |
| 30 |  | Asignar recursos a las tareas en Project. | 17h? | 2016-11-14 A | 2016-11-16 A | 29 | 100% |  |  |
| 31 | 2.2.1.3 | **[PM]Seguimiento** | 10d | 2016-11-03 A | 2016-11-16 A |  | 100% |  |  |
| 32 |  | [PM]Regitrar de tiempos y % de realización de tareas en Project. | 80h? | 2016-11-03 A | 2016-11-16 A |  | 100% |  | finish no earlier than 2016-11-16 |
| 33 | 2.2.2 | **V1** | 7.79d? | 2016-11-03 | 2016-11-14 |  |  | 2.21d |  |
| 34 | 2.2.2.1 | **[V1]Diseño de requerimientos y funciones de red.** | 2.02d? | 2016-11-04 | 2016-11-08 | 22 |  | 2.21d |  |
| 35 |  | Especificar que logros | 8.06h? | 2016-11-04 | 2016-11-07 |  |  | 2.21d |  |
| 36 |  | Especificar tipos de usuarios | 8.06h? | 2016-11-07 | 2016-11-08 | 35 |  | 2.21d |  |
| 37 | 2.2.2.2 | **[V1] Diseño técnico del motor de red.** | 3.93d? | 2016-11-08 | 2016-11-14 | 34 |  | 2.21d |  |
| 38 |  | Realizar diagrama | 8.89h? | 2016-11-08 | 2016-11-09 |  |  | 2.21d |  |
| 39 |  | Implementar diagrama | 22.58h? | 2016-11-09 | 2016-11-14 | 38 |  | 2.21d |  |
| 40 | 2.2.2.3 | **[V1]Documentación de diseño de mecánicas de los NPCs.** | 2.04d? | 2016-11-03 | 2016-11-07 |  |  | 6.68d |  |
| 41 | 2.2.2.3.1 | **Cria de Alien** | 1.02d? | 2016-11-03 | 2016-11-04 |  |  | 6.68d |  |
| 42 |  | Especificar al detalle mecanicas básicas de Cria de Alien | 3.06h? | 2016-11-03 | 2016-11-03 |  |  | 6.68d | start no earlier than 2016-11-03 |
| 43 |  | Especificar mecanicas especiales de Cria de Alien | 2.04h? | 2016-11-03 | 2016-11-03 | 42 |  | 6.68d |  |
| 44 |  | Especificar casos de uso de las mecánicas. | 1.02h? | 2016-11-03 | 2016-11-03 | 43 |  | 6.68d |  |
| 45 |  | Dibujar mecanicas de Cria de Alien | 2.04h? | 2016-11-03 | 2016-11-04 | 44 |  | 6.68d |  |
| 46 | 2.2.2.3.2 | **Alien Soldado** | 1.02d? | 2016-11-04 | 2016-11-07 | 41 |  | 6.68d |  |
| 47 |  | Especificar al detalle mecanicas básicas de Alien Soldado | 3.06h? | 2016-11-04 | 2016-11-04 |  |  | 6.68d |  |
| 48 |  | Especificar mecanicas especiales de Alien Soldado | 2.04h? | 2016-11-04 | 2016-11-04 | 47 |  | 6.68d |  |
| 49 |  | Especificar casos de uso de las mecánicas. | 1.02h? | 2016-11-04 | 2016-11-04 | 48 |  | 6.68d |  |
| 50 |  | Dibujar mecanicas de Alien Soldado | 2.04h? | 2016-11-04 | 2016-11-07 | 49 |  | 6.68d |  |
| 51 | 2.2.2.3.3 | **Alien Berserker** | 1.02d? | 2016-11-03 | 2016-11-04 |  |  | 6.68d |  |
| 52 |  | Especificar al detalle mecanicas básicas de Alien Berserker | 3.06h? | 2016-11-03 | 2016-11-03 |  |  | 6.68d | start no earlier than 2016-11-03 |
| 53 |  | Especificar mecanicas especiales de Alien Berserker | 2.04h? | 2016-11-03 | 2016-11-03 | 52 |  | 6.68d |  |
| 54 |  | Especificar casos de uso de las mecánicas. | 1.02h? | 2016-11-03 | 2016-11-03 | 53 |  | 6.68d |  |
| 55 |  | Dibujar mecanicas de Alien Berserker | 2.04h? | 2016-11-03 | 2016-11-04 | 54 |  | 6.68d |  |
| 56 | 2.2.2.3.4 | **Alien Jefe** | 1.02d? | 2016-11-04 | 2016-11-07 | 51 |  | 6.68d |  |
| 57 |  | Especificar al detalle mecanicas básicas de Alien Jefe | 3.06h? | 2016-11-04 | 2016-11-04 |  |  | 6.68d |  |
| 58 |  | Especificar mecanicas especiales de Alien Jefe | 2.04h? | 2016-11-04 | 2016-11-04 | 57 |  | 6.68d |  |
| 59 |  | Especificar casos de uso de las mecánicas. | 1.02h? | 2016-11-04 | 2016-11-04 | 58 |  | 6.68d |  |
| 60 |  | Dibujar mecanicas de Alien Jefe | 2.04h? | 2016-11-04 | 2016-11-07 | 59 |  | 6.68d |  |
| 61 | 2.2.2.4 | **[V1]Documento de diseño técnico de la arquitectura de IA** | 1.28d? | 2016-11-07 | 2016-11-08 | 40 |  | 6.68d |  |
| 62 |  | Especificar IA de Cria de Alien | 5h? | 2016-11-07 | 2016-11-07 |  |  | 6.71d |  |
| 63 |  | Especificar IA de Alien Soldado | 5h? | 2016-11-07 | 2016-11-08 | 62 |  | 6.71d |  |
| 64 |  | Especificar IA de Alien Berserker | 5.1h? | 2016-11-07 | 2016-11-07 |  |  | 6.68d |  |
| 65 |  | Especificar IA de Alien Jefe | 5.1h? | 2016-11-07 | 2016-11-08 | 64 |  | 6.68d |  |
| 66 | 2.2.2.5 | **[V1]Documento de diseño de sistemas de toma de decisión** | 1.28d? | 2016-11-03 | 2016-11-04 |  |  | 8.72d |  |
| 67 |  | Crear diagrama de toma de decisiones | 4.08h? | 2016-11-03 | 2016-11-03 |  |  | 8.72d | start no earlier than 2016-11-03 |
| 68 |  | Especificar las tomas de decisiones, de Protagonista | 2.04h? | 2016-11-03 | 2016-11-03 | 67 |  | 8.72d |  |
| 69 |  | Especificar las tomas de decisiones, de Cria de Alien | 2.04h? | 2016-11-03 | 2016-11-03 | 67 |  | 8.72d |  |
| 70 |  | Especificar las tomas de decisiones, de Alien Berserker | 2.04h? | 2016-11-03 | 2016-11-04 | 68 |  | 8.72d |  |

| ID | WBS | Task | Duration | Start | Finish | Predecessors | Complete | Total float | Constraint |
| --- | --- | --- | --- | --- | --- | --- | --- | --- | --- |
| 71 |  | Especificar las tomas de decisiones, de Alien Soldado | 2.04h? | 2016-11-03 | 2016-11-04 | 69 |  | 8.72d |  |
| 72 |  | Especificar las tomas de decisiones, de Alien Jefe | 2.08h? | 2016-11-04 | 2016-11-04 | 70, 71 |  | 8.72d |  |
| 73 | 2.2.3 | **V2** | 10d | 2016-11-03 | 2016-11-16 |  |  |  |  |
| 74 | 2.2.3.1 | **[V2]Mecánicas básicas entidades sin IA.** | 3.83d? | 2016-11-09 | 2016-11-14 | 98 |  | 2.09d |  |
| 75 |  | Estudiar mecánicas | 5.1h? | 2016-11-09 | 2016-11-09 |  |  | 2.09d |  |
| 76 |  | Programar mecánicas | 15.31h? | 2016-11-09 | 2016-11-11 | 75 |  | 2.09d |  |
| 77 |  | Realizar pruebas | 5.1h? | 2016-11-11 | 2016-11-14 | 76 |  | 2.09d |  |
| 78 |  | Mejorar código | 5.1h? | 2016-11-14 | 2016-11-14 | 77 |  | 2.09d |  |
| 79 | 2.2.3.2 | **[V2]Diseño e implementación de la Arquitectura basada en componentes.** | 7.21d | 2016-11-07 | 2016-11-16 | 110 |  |  |  |
| 80 |  | Realizar esquemas | 17.78h? | 2016-11-07 | 2016-11-10 |  |  | 1.48d |  |
| 81 |  | Realizar diagrama | 16.33h? | 2016-11-10 | 2016-11-14 | 80 |  | 1.48d |  |
| 82 |  | Comprobar errores | 11.73h? | 2016-11-14 | 2016-11-15 | 81 |  | 1.48d |  |
| 83 |  | Reediseñar diagrama | 11.84h | 2016-11-15 | 2016-11-16 | 82 |  |  | finish no earlier than 2016-11-16 |
| 84 | 2.2.3.3 | **[V2]Formato propio para la definición de los niveles (documento con la especificación del formato)** | 1d? | 2016-11-03 | 2016-11-03 |  |  | 9d |  |
| 85 |  | Leer documento | 1d? | 2016-11-03 | 2016-11-03 |  |  | 9d |  |
| 86 |  | Rellenar documento | 1d? | 2016-11-03 | 2016-11-03 |  |  | 9d |  |
| 87 |  | Analizar documento | 1d? | 2016-11-03 | 2016-11-03 |  |  | 9d |  |
| 88 |  | Actulizar documento | 1d? | 2016-11-03 | 2016-11-03 |  |  | 9d |  |
| 89 | 2.2.4 | **PD** | 1d? | 2016-11-03 A | 2016-11-03 A |  | 100% |  |  |
| 90 |  | [PD]I1. Video con animación del logo de la empresa | 1d? | 2016-11-03 A | 2016-11-03 A |  | 100% |  |  |
| 91 | 2.2.5 | **RV** | 7.48d? | 2016-11-04 A | 2016-11-15 A |  | 100% |  |  |
| 92 | 2.2.5.1 | **[RV]I1. Boceto de lo personajes.** | 0.97d? | 2016-11-14 A | 2016-11-15 A | 37 | 100% |  |  |
| 93 |  | Dibujar Cría de Alien, diferentes perspectivas | 2.58h? | 2016-11-14 A | 2016-11-15 A |  | 100% |  |  |
| 94 |  | Dibujar Alien Soldado, diferentes perspectivas | 2.58h? | 2016-11-15 A | 2016-11-15 A | 93 | 100% |  |  |
| 95 |  | Dibujar Alien Berserker, diferentes perspectivas | 2.58h? | 2016-11-14 A | 2016-11-15 A |  | 100% |  |  |
| 96 |  | Dibujar Alien Jefe, diferentes perspectivas | 2.58h? | 2016-11-15 A | 2016-11-15 A | 95 | 100% |  |  |
| 97 |  | Dibujar Personaje principal, diferentes perspectivas | 2.58h? | 2016-11-15 A | 2016-11-15 A | 96, 94 | 100% |  |  |
| 98 | 2.2.5.2 | **[RV]I6. Bocetos de los elementos.** | 0.77d? | 2016-11-08 A | 2016-11-09 A | 61 | 100% |  |  |
| 99 |  | Dibujar metralleta, diferentes perspectivas | 1.02h? | 2016-11-08 A | 2016-11-08 A |  | 100% |  |  |
| 100 |  | Dibujar Fúsil Laser, diferentes perspecgivas | 1.02h? | 2016-11-08 A | 2016-11-08 A | 99 | 100% |  |  |
| 101 |  | Dibujar Escopeta, diferentes perspectivas | 1.02h? | 2016-11-08 A | 2016-11-08 A | 100 | 100% |  |  |
| 102 |  | Dibujar Llaves, diferentes perspectivas | 1.02h? | 2016-11-08 A | 2016-11-08 A | 101 | 100% |  |  |
| 103 |  | Dibujar Munición pistola, diferentes perspectivas | 1.02h? | 2016-11-08 A | 2016-11-08 A | 102 | 100% |  |  |
| 104 |  | Dibujar Munición lanzagranadas, diferentes perspectivas | 1.02h? | 2016-11-08 A | 2016-11-09 A | 103 | 100% |  |  |
| 105 |  | Dibujar cuchillo, diferentes perspectivas | 1.02h? | 2016-11-08 A | 2016-11-08 A |  | 100% |  |  |
| 106 |  | Dibujar Pistola, diferentes perspectivas | 1.02h? | 2016-11-08 A | 2016-11-08 A | 105 | 100% |  |  |
| 107 |  | Dibujar Lanzagranadas, diferentes perspectivas | 1.02h? | 2016-11-08 A | 2016-11-08 A | 106 | 100% |  |  |
| 108 |  | Dibujar Munición metralleta, diferentes perspectivas | 1.02h? | 2016-11-08 A | 2016-11-08 A | 107 | 100% |  |  |
| 109 |  | Dibujar Munición escopeta, diferentes perspectivas | 1.02h? | 2016-11-08 A | 2016-11-08 A | 108 | 100% |  |  |
| 110 | 2.2.5.3 | **[RV]I7. Boceto del entorno.** | 1.51d? | 2016-11-04 A | 2016-11-07 A | 66 | 100% |  |  |
| 111 |  | Diseñar en papel del mapa | 4.08h? | 2016-11-04 A | 2016-11-04 A |  | 100% |  |  |
| 112 |  | Diseñar habitaciones del mapa con detalle | 6h? | 2016-11-04 A | 2016-11-07 A | 111 | 100% |  |  |
| 113 |  | Especificar materiales de la nave | 2h? | 2016-11-07 A | 2016-11-07 A | 112 | 100% |  |  |
| 114 | 2.3 | **ITERACIÓN 3** | 9d? | 2016-11-17 A | 2016-11-29 | 20 | 3% | 6.62d |  |
| 115 | 2.3.1 | **PM** | 9d? | 2016-11-17 | 2016-11-29 |  |  | 6.62d |  |
| 116 | 2.3.1.1 | **[PM]Planificación** | 1.38d? | 2016-11-22 | 2016-11-23 |  |  | 8.05d |  |
| 117 | 2.3.1.1.1 | **[PM]Detallar plan iteraciones del mes de Noviembre-Diciembre.** | 1.38d? | 2016-11-22 | 2016-11-23 | 147 |  | 8.05d |  |
| 118 |  | Creación subtareas y precedencias en Project. | 5h? | 2016-11-22 | 2016-11-23 |  |  | 8.05d | start no earlier than 2016-11-17 |
| 119 |  | Asignar recursos a las tareas en Project. | 6h? | 2016-11-23 | 2016-11-23 | 118 |  | 8.05d | finish no earlier than 2016-11-17 |
| 120 | 2.3.1.2 | **[PM]Seguimiento** | 9d? | 2016-11-17 | 2016-11-29 |  |  | 6.62d |  |
| 121 |  | [PM]Regitrar de tiempos y % de realización de tareas en Project. | 9d? | 2016-11-17 | 2016-11-29 |  |  | 6.62d |  |
| 122 |  | [PM]Aplicar el modelo EVA en Project. (NO, Hito 3 iter 3) | 21.6h? | 2016-11-23 | 2016-11-28 | 117 |  | 8.05d |  |
| 123 | 2.3.2 | **TAG** | 3.75d? | 2016-11-24 | 2016-11-29 |  |  | 6.88d |  |
| 124 | 2.3.2.1 | **[TAG]E1. Visualización: visualizador OpenGL 4.X simple, con datos por programa. Shader Básico.** | 3.75d? | 2016-11-24 | 2016-11-29 | 158 |  | 6.88d |  |
| 125 |  | Estudiar algoritmo | 8h? | 2016-11-24 | 2016-11-24 |  |  | 6.88d |  |
| 126 |  | Programar algoritmo | 12h? | 2016-11-25 | 2016-11-28 | 125 |  | 6.88d | start no earlier than 2016-11-21 |
| 127 |  | Realizar pruebas | 8h? | 2016-11-28 | 2016-11-29 | 126 |  | 6.88d |  |
| 128 |  | Optimizar código | 2h? | 2016-11-29 | 2016-11-29 | 127 |  | 6.88d |  |
| 129 | 2.3.3 | **PD** | 8.7d? | 2016-11-17 A | 2016-11-29 |  | 53% | 6.92d |  |
| 130 | 2.3.3.1 | **[PD]I1. Video con animación del logo de la empresa** | 1.12d? | 2016-11-28 A | 2016-11-29 A | 122 | 100% |  |  |
| 131 |  | Diseñar en papel de diferentes logos | 1h? | 2016-11-28 A | 2016-11-28 A |  | 100% |  |  |
| 132 |  | Seleccionar logo | 0.5h? | 2016-11-28 A | 2016-11-28 A | 131 | 100% |  |  |
| 133 |  | Digitalizar logotipo | 0.5h? | 2016-11-28 A | 2016-11-28 A | 132 | 100% |  |  |
| 134 |  | Procesar imagen digitalmente | 2h? | 2016-11-28 A | 2016-11-29 A | 133 | 100% |  |  |
| 135 |  | Retocar digitalmente de video con After Effects | 3h? | 2016-11-29 A | 2016-11-29 A | 134 | 100% |  |  |
| 136 |  | Montar video con premiere | 2h? | 2016-11-29 A | 2016-11-29 A | 135 | 100% |  |  |
| 137 |  | [PD]I2. Cartel juego/proyecto. | 1d? | 2016-11-17 | 2016-11-17 |  |  | 14.62d |  |
| 138 | 2.3.4 | **V1** | 1.25d? | 2016-11-17 | 2016-11-18 |  |  | 6.88d |  |
| 139 | 2.3.4.1 | **[V1]Gestión de estados de la IA con Máquina de Estados.** | 1.25d? | 2016-11-17 | 2016-11-18 |  |  | 6.88d |  |
| 140 |  | Estudiar algoritmo | 2h? | 2016-11-17 | 2016-11-17 |  |  | 6.88d |  |

| ID | WBS | Task | Duration | Start | Finish | Predecessors | Total float |
| --- | --- | --- | --- | --- | --- | --- | --- |
| 141 |  | Programar algoritmo | 4h? | 2016-11-17 | 2016-11-17 | 140 | 6.88d |
| 142 |  | Realizar pruebas | 2h? | 2016-11-17 | 2016-11-17 | 141 | 6.88d |
| 143 |  | Optimizar código | 2h? | 2016-11-18 | 2016-11-18 | 142 | 6.88d |
| 144 | 2.3.5 | **V2** | 6.62d? | 2016-11-17 | 2016-11-25 |  | 8.05d |
| 145 |  | [V2]Diseño e implementación de la Arquitectura basada en componentes | 1d? | 2016-11-17 | 2016-11-17 |  | 14.62d |
| 146 |  | [V2]Mecánicas básicas entidades sin IA | 1d? | 2016-11-17 | 2016-11-17 |  | 14.62d |
| 147 | 2.3.5.3 | **[V2]Control del player por motor de físicas 2D, Dynamic o kinematic** | 3.5d? | 2016-11-17 | 2016-11-22 |  | 8.05d |
| 148 |  | Incluir motor de físicas | 8h? | 2016-11-17 | 2016-11-17 |  | 8.05d |
| 149 |  | Programar mecánicas | 10h? | 2016-11-18 | 2016-11-21 | 148 | 8.05d |
| 150 |  | Realizar pruebas | 5h? | 2016-11-21 | 2016-11-21 | 149 | 8.05d |
| 151 |  | Mejorar código | 5h? | 2016-11-21 | 2016-11-22 | 150 | 8.05d |
| 152 |  | [V2]Creación de un cargador de niveles. | 1d? | 2016-11-17 | 2016-11-17 |  | 14.62d |
| 153 | 2.3.5.5 | **[V2]Implementación de cámara de seguimiento.** | 3.12d? | 2016-11-22 | 2016-11-25 | 147 | 9d |
| 154 |  | Estudiar tipos de cámaras | 5h? | 2016-11-22 | 2016-11-23 |  | 9d |
| 155 |  | Programar cámara | 10h? | 2016-11-23 | 2016-11-24 | 154 | 9d |
| 156 |  | Realizar pruebas | 5h? | 2016-11-24 | 2016-11-24 | 155 | 9d |
| 157 |  | Optimizar código | 5h? | 2016-11-25 | 2016-11-25 | 156 | 9d |
| 158 | 2.3.5.6 | **[V2]Mecánicas de acción.** | 3.75d? | 2016-11-18 | 2016-11-23 | 139 | 6.88d |
| 159 |  | Estudiar mecánicas | 5h? | 2016-11-18 | 2016-11-18 |  | 6.88d |
| 160 |  | Programar mecánicas | 15h? | 2016-11-18 | 2016-11-22 | 159 | 6.88d |
| 161 |  | Realizar pruebas | 5h? | 2016-11-22 | 2016-11-23 | 160 | 6.88d |
| 162 |  | Mejorar código | 5h? | 2016-11-23 | 2016-11-23 | 161 | 6.88d |
| 163 | 2.4 | **ITERACIÓN 4** | 10d | 2016-12-01 | 2016-12-14 | 114 |  |
| 164 | 2.4.1 | **PM** | 1d? | 2016-12-01 | 2016-12-01 |  | 9d |
| 165 | 2.4.1.1 | **[PM]Planificación** | 1d? | 2016-12-01 | 2016-12-01 |  | 9d |
| 166 | 2.4.1.1.1 | **[PM]Detallar plan iteraciones del mes de Noviembre-Diciembre.** | 1d? | 2016-12-01 | 2016-12-01 |  | 9d |
| 167 |  | Creación subtareas y precedencias en Project. | 1d? | 2016-12-01 | 2016-12-01 |  | 9d |
| 168 |  | Asignar recursos a las tareas en Project. | 1d? | 2016-12-01 | 2016-12-01 |  | 9d |
| 169 | 2.4.1.2 | **[PM]Seguimiento** | 1d? | 2016-12-01 | 2016-12-01 |  | 9d |
| 170 |  | [PM]Regitrar de tiempos y % de realización de tareas en Project. | 1d? | 2016-12-01 | 2016-12-01 |  | 9d |
| 171 | 2.4.2 | **TAG** | 1d? | 2016-12-01 | 2016-12-01 |  | 9d |
| 172 |  | [TAG]E1. Visualización: visualizador OpenGL 4.X simple, con datos por programa. Shader Básico. | 1d? | 2016-12-01 | 2016-12-01 |  | 9d |
| 173 | 2.4.2.2 | **[TAG]E2. Gestor de recursos: Parser de objetos en multiples formatos, salida en modo texto.** | 1d? | 2016-12-01 | 2016-12-01 |  | 9d |
| 174 |  | Estudiar algoritmo | 1d? | 2016-12-01 | 2016-12-01 |  | 9d |
| 175 |  | Programar algoritmo | 1d? | 2016-12-01 | 2016-12-01 |  | 9d |
| 176 |  | Realizar pruebas | 1d? | 2016-12-01 | 2016-12-01 |  | 9d |
| 177 |  | Optimizar código | 1d? | 2016-12-01 | 2016-12-01 |  | 9d |
| 178 | 2.4.3 | **PD** | 1d? | 2016-12-01 | 2016-12-01 |  | 9d |
| 179 | 2.4.3.1 | **[PD]I2. Cartel juego/proyecto.** | 1d? | 2016-12-01 | 2016-12-01 |  | 9d |
| 180 |  | Diseñar prototipos | 1d? | 2016-12-01 | 2016-12-01 |  | 9d |
| 181 |  | Seleccionar protipos | 1d? | 2016-12-01 | 2016-12-01 |  | 9d |
| 182 |  | Diseñar de elementos básicos con Illustrator | 1d? | 2016-12-01 | 2016-12-01 |  | 9d |
| 183 |  | Diseñar y componer diferentes elementos con Photoshop | 1d? | 2016-12-01 | 2016-12-01 |  | 9d |
| 184 | 2.4.4 | **V1** | 1d? | 2016-12-01 | 2016-12-01 |  | 9d |
| 185 | 2.4.4.1 | **[V1]Pathfinding Básico con rejilla (A*/Dijkstra)** | 1d? | 2016-12-01 | 2016-12-01 |  | 9d |
| 186 |  | Estudiar algoritmo | 1d? | 2016-12-01 | 2016-12-01 |  | 9d |
| 187 |  | Programar algoritmo | 1d? | 2016-12-01 | 2016-12-01 |  | 9d |
| 188 |  | Realizar pruebas | 1d? | 2016-12-01 | 2016-12-01 |  | 9d |
| 189 |  | Optimizar código | 1d? | 2016-12-01 | 2016-12-01 |  | 9d |
| 190 | 2.4.4.2 | **[V1]Sistema de toma de decisiones con Lógica Difusa** | 1d? | 2016-12-01 | 2016-12-01 |  | 9d |
| 191 |  | Estudiar algoritmo | 1d? | 2016-12-01 | 2016-12-01 |  | 9d |
| 192 |  | Programar algoritmo | 1d? | 2016-12-01 | 2016-12-01 |  | 9d |
| 193 |  | Realizar pruebas | 1d? | 2016-12-01 | 2016-12-01 |  | 9d |
| 194 |  | Optimizar código | 1d? | 2016-12-01 | 2016-12-01 |  | 9d |
| 195 |  | [V1]Gestión de estados de la IA con Máquina de Estados. | 1d? | 2016-12-01 | 2016-12-01 |  | 9d |
| 196 | 2.4.4.4 | **[V1]Sistema de toma de decisiones con Behaviour Trees** | 1d? | 2016-12-01 | 2016-12-01 |  | 9d |
| 197 |  | Estudiar algoritmo | 1d? | 2016-12-01 | 2016-12-01 |  | 9d |
| 198 |  | Programar algoritmo | 1d? | 2016-12-01 | 2016-12-01 |  | 9d |
| 199 |  | Realizar pruebas | 1d? | 2016-12-01 | 2016-12-01 |  | 9d |
| 200 |  | Optimizar código | 1d? | 2016-12-01 | 2016-12-01 |  | 9d |
| 201 | 2.4.5 | **V2** | 4.38d? | 2016-12-01 | 2016-12-07 |  | 5.62d |
| 202 |  | [V2]Mecánicas básicas entidades sin IA. | 1d? | 2016-12-01 | 2016-12-01 |  | 9d |
| 203 |  | [V2]Diseño e implementación de la Arquitectura basada en componentes. | 1d? | 2016-12-01 | 2016-12-01 |  | 9d |
| 204 |  | [V2]Control del player por motor de físicas 2D, Dynamic o kinematic | 1d? | 2016-12-01 | 2016-12-01 |  | 9d |
| 205 | 2.4.5.4 | **[V2]Creación de un cargador de niveles.** | 4.38d? | 2016-12-01 | 2016-12-07 |  | 5.62d |
| 206 |  | Estudiar cargador de niveles | 5h? | 2016-12-01 | 2016-12-01 |  | 5.62d |
| 207 |  | Programar cargador de niveles | 20h? | 2016-12-01 | 2016-12-06 | 206 | 5.62d |
| 208 |  | Realizar pruebas | 5h? | 2016-12-06 | 2016-12-06 | 207 | 5.62d |
| 209 |  | Optimizar código | 5h? | 2016-12-06 | 2016-12-07 | 208 | 5.62d |
| 210 | 2.4.5.5 | **[V2]Creación de un editor de niveles.** | 4.38d? | 2016-12-01 | 2016-12-07 |  | 5.62d |

| ID | WBS | Task | Duration | Start | Finish | Predecessors | Complete | Total float |
| --- | --- | --- | --- | --- | --- | --- | --- | --- |
| 211 |  | Estudiar editor de niveles | 5h? | 2016-12-01 | 2016-12-01 |  |  | 5.62d |
| 212 |  | Programar editor de niveles | 20h? | 2016-12-01 | 2016-12-06 | 211 |  | 5.62d |
| 213 |  | Realizar pruebas | 5h? | 2016-12-06 | 2016-12-06 | 212 |  | 5.62d |
| 214 |  | Optimizar código | 5h? | 2016-12-06 | 2016-12-07 | 213 |  | 5.62d |
| 215 | 2.4.5.6 | **[V2]Sistema de depuración visual de las físicas** | 1d? | 2016-12-01 | 2016-12-01 |  |  | 9d |
| 216 |  | Estudiar algoritmo | 1d? | 2016-12-01 | 2016-12-01 |  |  | 9d |
| 217 |  | Programar algoritmo | 1d? | 2016-12-01 | 2016-12-01 |  |  | 9d |
| 218 |  | Realizar pruebas | 1d? | 2016-12-01 | 2016-12-01 |  |  | 9d |
| 219 |  | Optimizar código | 1d? | 2016-12-01 | 2016-12-01 |  |  | 9d |
| 220 | 2.4.5.7 | **[V2]Uso de trazado de rayos y otros test de las fisicas.** | 1d? | 2016-12-01 | 2016-12-01 |  |  | 9d |
| 221 |  | Estudiar algoritmo | 1d? | 2016-12-01 | 2016-12-01 |  |  | 9d |
| 222 |  | Programar algoritmo | 1d? | 2016-12-01 | 2016-12-01 |  |  | 9d |
| 223 |  | Realizar pruebas | 1d? | 2016-12-01 | 2016-12-01 |  |  | 9d |
| 224 |  | Optimizar código | 1d? | 2016-12-01 | 2016-12-01 |  |  | 9d |
| 225 | 2.5 | **ITERACIÓN 5** | 7d | 2016-12-15 A | 2016-12-23 | 163 | 7% |  |
| 226 | 2.5.1 | **V2** | 1d? | 2016-12-15 | 2016-12-15 |  |  | 6d |
| 227 |  | [V2]Diseño e implementación de la Arquitectura basada en componentes. | 1d? | 2016-12-15 | 2016-12-15 |  |  | 6d |
| 228 |  | [V2]Implementación de cámara de seguimiento. | 1d? | 2016-12-15 | 2016-12-15 |  |  | 6d |
| 229 |  | [V2]Mecánicas básicas entidades sin IA. | 1d? | 2016-12-15 | 2016-12-15 |  |  | 6d |
| 230 |  | [V2]Mecánicas de acción. | 1d? | 2016-12-15 | 2016-12-15 |  |  | 6d |
| 231 | 2.5.2 | **V1** | 1d? | 2016-12-15 | 2016-12-15 |  |  | 6d |
| 232 |  | [V1]Sistema de toma de decisiones con Behaviour Trees | 1d? | 2016-12-15 | 2016-12-15 |  |  | 6d |
| 233 |  | [V1]Gestión de estados de la IA con Máquina de Estados. | 1d? | 2016-12-15 | 2016-12-15 |  |  | 6d |
| 234 | 2.5.3 | **PD** | 1d? | 2016-12-15 A | 2016-12-15 |  | 50% | 6d |
| 235 |  | [PD]I1. Video con animación del logo de la empresa | 1d? | 2016-12-15 A | 2016-12-15 A |  | 100% |  |
| 236 |  | [PD]I2. Cartel juego/proyecto. | 1d? | 2016-12-15 | 2016-12-15 |  |  | 6d |
| 237 | 2.5.4 | **PM** | 1d? | 2016-12-15 | 2016-12-15 |  |  | 6d |
| 238 | 2.5.4.1 | **[PM]Planificación** | 1d? | 2016-12-15 | 2016-12-15 |  |  | 6d |
| 239 | 2.5.4.1.1 | **[PM]Detallar plan iteraciones del mes de Noviembre-Diciembre.** | 1d? | 2016-12-15 | 2016-12-15 |  |  | 6d |
| 240 |  | Creación subtareas y precedencias en Project. | 1d? | 2016-12-15 | 2016-12-15 |  |  | 6d |
| 241 |  | Asignar recursos a las tareas en Project. | 1d? | 2016-12-15 | 2016-12-15 |  |  | 6d |
| 242 | 2.5.4.2 | **[PM]Seguimiento** | 1d? | 2016-12-15 | 2016-12-15 |  |  | 6d |
| 243 |  | [PM]Regitrar de tiempos y % de realización de tareas en Project. | 1d? | 2016-12-15 | 2016-12-15 |  |  | 6d |
| 244 |  | [PM]Elaborar la presentación del Hito 1. | 1d? | 2016-12-15 | 2016-12-15 |  |  | 6d |
| 245 |  | [PM]Exponer la presentación del Hito 1. | 1d? | 2016-12-15 | 2016-12-15 |  |  | 6d |
| 246 |  | [PM]Confeccionar informes de Iteración e informe resumen de Hito 1. | 1d? | 2016-12-15 | 2016-12-15 |  |  | 6d |
| 247 |  | [PM]Comparar la planifición prevista y real en Project Hito 1. | 1d? | 2016-12-15 | 2016-12-15 |  |  | 6d |
| 248 | 3 | **HITO 2** | 26d? | 2016-12-26 | 2017-01-30 | 11 |  | 0d |
| 249 | 3.1 | **[PM]Detallar plan iteraciones del mes de Enero** | 1d? | 2016-12-26 | 2016-12-26 |  |  | 25d |
| 250 |  | Creación de subtareas y precedencias en Project. | 1d? | 2016-12-26 | 2016-12-26 |  |  | 25d |
| 251 |  | Asignar recursos a las tareas en Project. | 1d? | 2016-12-26 | 2016-12-26 |  |  | 25d |
| 252 |  | [PM]Revisar especifiación del proyecto. | 1d? | 2016-12-26 | 2016-12-26 |  |  | 25d |
| 253 |  | [PM]Reestimar el proyecto | 1d? | 2016-12-26 | 2016-12-26 |  |  | 25d |
| 254 | 3.4 | **ITERACIÓN 1** | 26d | 2016-12-26 | 2017-01-30 |  |  |  |
| 255 |  | [PM]Registrar de tiempos y % de realización de tareas en Project. | 1d? | 2016-12-26 | 2016-12-26 |  |  | 25d |
| 256 |  | [PM]Comparar la planificación prevista y real en Projects Hito 2 | 1d? | 2016-12-26 | 2016-12-26 |  |  | 25d |
| 257 |  | [PM]Confeccionar informes de Iteración e informe resumen de Hito 2 | 1d? | 2016-12-26 | 2016-12-26 |  |  | 25d |
| 258 |  | [TAG]E1. Visualización: visualizador OpenGL 4.X simple, con datos por programa. Shader Básico. | 1d? | 2016-12-26 | 2016-12-26 |  |  | 25d |
| 259 |  | [TAG]E3. Visualización: visualizador OpenGL 4.X simple, con datos por fichero. Shader básico | 1d? | 2016-12-26 | 2016-12-26 |  |  | 25d |
| 260 |  | [V1]Gestión de estados de la IA con Máquina de Estados. | 1d? | 2016-12-26 | 2016-12-26 |  |  | 25d |
| 261 |  | [V1]Sistema de toma de decisiones con Behaviour Trees | 1d? | 2016-12-26 | 2016-12-26 |  |  | 25d |
| 262 | 3.4.8 | **[V1]Sistema de control de movimiento con Steering Behaviours** | 1d? | 2016-12-26 | 2016-12-26 |  |  | 25d |
| 263 |  | Estudiar algoritmo | 1d? | 2016-12-26 | 2016-12-26 |  |  | 25d |
| 264 |  | Programar algoritmo | 1d? | 2016-12-26 | 2016-12-26 |  |  | 25d |
| 265 |  | Realizar pruebas | 1d? | 2016-12-26 | 2016-12-26 |  |  | 25d |
| 266 |  | Optimizar código | 1d? | 2016-12-26 | 2016-12-26 |  |  | 25d |
| 267 | 3.4.9 | **[V1]Sistema de percepción sensorial.** | 1d? | 2016-12-26 | 2016-12-26 |  |  | 25d |
| 268 |  | Estudiar algoritmo | 1d? | 2016-12-26 | 2016-12-26 |  |  | 25d |
| 269 |  | Programar algoritmo | 1d? | 2016-12-26 | 2016-12-26 |  |  | 25d |
| 270 |  | Realizar pruebas | 1d? | 2016-12-26 | 2016-12-26 |  |  | 25d |
| 271 |  | Optimizar código | 1d? | 2016-12-26 | 2016-12-26 |  |  | 25d |
| 272 | 3.4.10 | **[V1]Sistema de Waypoints para Pathfinding continuo.** | 1d? | 2016-12-26 | 2016-12-26 |  |  | 25d |
| 273 |  | Estudiar algoritmo | 1d? | 2016-12-26 | 2016-12-26 |  |  | 25d |
| 274 |  | Programar algoritmo | 1d? | 2016-12-26 | 2016-12-26 |  |  | 25d |
| 275 |  | Realizar pruebas | 1d? | 2016-12-26 | 2016-12-26 |  |  | 25d |
| 276 |  | Optimizar código | 1d? | 2016-12-26 | 2016-12-26 |  |  | 25d |
| 277 |  | [V1]Editor in-game de parámetros y comportamientos de la IA | 1d? | 2016-12-26 | 2016-12-26 |  |  | 25d |
| 278 |  | [V2]Mecánicas de acción. | 1d? | 2016-12-26 | 2016-12-26 |  |  | 25d |
| 279 |  | [V2]Diseño e implementación de la Arquitectura basada en componentes. | 1d? | 2016-12-26 | 2016-12-26 |  |  | 25d |
| 280 |  | [V2]Mecánicas básicas entidades sin IA. | 1d? | 2016-12-26 | 2016-12-26 |  |  | 25d |

| ID | WBS | Task | Duration | Start | Finish | Predecessors | Total float |
| --- | --- | --- | --- | --- | --- | --- | --- |
| 281 | 3.4.15 | **[V2]Powers-up y elementos adicionales** | 1d? | 2016-12-26 | 2016-12-26 |  | 25d |
| 282 |  | Especificar powers-up | 1d? | 2016-12-26 | 2016-12-26 |  | 25d |
| 283 |  | Programar powers-up | 1d? | 2016-12-26 | 2016-12-26 |  | 25d |
| 284 |  | Realizar pruebas | 1d? | 2016-12-26 | 2016-12-26 |  | 25d |
| 285 |  | Balancear powers-up | 1d? | 2016-12-26 | 2016-12-26 |  | 25d |
| 286 |  | Optimizar código | 1d? | 2016-12-26 | 2016-12-26 |  | 25d |
| 287 | 3.4.16 | **[V2]Implementación de cámara inteligente que ajuste ángulo y zoom.** | 1d? | 2016-12-26 | 2016-12-26 |  | 25d |
| 288 |  | Estudiar la cámara | 1d? | 2016-12-26 | 2016-12-26 |  | 25d |
| 289 |  | Programar cámara | 1d? | 2016-12-26 | 2016-12-26 |  | 25d |
| 290 |  | Realizar pruebas | 1d? | 2016-12-26 | 2016-12-26 |  | 25d |
| 291 |  | Optimizar código | 1d? | 2016-12-26 | 2016-12-26 |  | 25d |
| 292 | 3.4.17 | **[V2]Integración de librería para GUI.** | 1d? | 2016-12-26 | 2016-12-26 |  | 25d |
| 293 |  | Ver distintas librerias | 1d? | 2016-12-26 | 2016-12-26 |  | 25d |
| 294 |  | Incluir librería | 1d? | 2016-12-26 | 2016-12-26 |  | 25d |
| 295 |  | Diseñar GUI | 1d? | 2016-12-26 | 2016-12-26 |  | 25d |
| 296 |  | Incluir GUI | 1d? | 2016-12-26 | 2016-12-26 |  | 25d |
| 297 |  | Realizar pruebas | 1d? | 2016-12-26 | 2016-12-26 |  | 25d |
| 298 | 3.4.18 | **[V2]Implementación de menús.** | 1d? | 2016-12-26 | 2016-12-26 |  | 25d |
| 299 |  | Diseñar menus | 1d? | 2016-12-26 | 2016-12-26 |  | 25d |
| 300 |  | Implementar menus | 1d? | 2016-12-26 | 2016-12-26 |  | 25d |
| 301 |  | Probar menus | 1d? | 2016-12-26 | 2016-12-26 |  | 25d |
| 302 |  | Optimizar menus | 1d? | 2016-12-26 | 2016-12-26 |  | 25d |
| 303 | 3.4.19 | **[V2]Oclusiones mediante portales/PVS** | 1d? | 2016-12-26 | 2016-12-26 |  | 25d |
| 304 |  | Estudiar algoritmo | 1d? | 2016-12-26 | 2016-12-26 |  | 25d |
| 305 |  | Programar algoritmo | 1d? | 2016-12-26 | 2016-12-26 |  | 25d |
| 306 |  | Realizar pruebas | 1d? | 2016-12-26 | 2016-12-26 |  | 25d |
| 307 |  | Optimizar código | 1d? | 2016-12-26 | 2016-12-26 |  | 25d |
| 308 |  | [V2]Sistema de Level-Of-Detail para la selección de la malla grafica de los objetos. | 1d? | 2016-12-26 | 2016-12-26 |  | 25d |
| 309 |  | [PD]I3. Trailer juego/proyecto | 1d? | 2016-12-26 | 2016-12-26 |  | 25d |
| 310 |  | [RV]I2. Modelado de personajes | 1d? | 2016-12-26 | 2016-12-26 |  | 25d |
| 311 |  | [RV]I3. Texturizado de personajes. | 1d? | 2016-12-26 | 2016-12-26 |  | 25d |
| 312 |  | [RV]I4. Rigging de los personajes. | 1d? | 2016-12-26 | 2016-12-26 |  | 25d |
| 313 | 4 | **HITO 3** | 47d? | 2017-01-31 | 2017-04-05 | 248 | 0d |
| 314 | 4.1 | **[PM]Detallar plan iteraciones del mes de Febrero** | 1d? | 2017-01-31 | 2017-01-31 |  | 46d |
| 315 |  | Creación de subtareas y precedencias en Project. | 1d? | 2017-01-31 | 2017-01-31 |  | 46d |
| 316 |  | Asignar recursos a las tareas en Project. | 1d? | 2017-01-31 | 2017-01-31 |  | 46d |
| 317 | 4.2 | **ITERACIÓN 1** | 10d | 2017-01-31 | 2017-02-12 |  |  |
| 318 |  | [TAG]E4. Tipos de datos para entidades de tipo transformacion. Salida en modo texto | 1d? | 2017-01-31 | 2017-01-31 |  | 8d |
| 319 |  | [TAG]E5. Tipos de datos para entidades de tipo malla. Salida en modo texto | 1d? | 2017-01-31 | 2017-01-31 |  | 8d |
| 320 |  | [TAG]E6.Tipos de datos para entidades de tipo cámara y luz. Salida en modo texto | 1d? | 2017-01-31 | 2017-01-31 |  | 8d |
| 321 |  | [TAG]E7. Tipos de datos para entidades de tipo animación. Salida en modo texto | 1d? | 2017-01-31 | 2017-01-31 |  | 8d |
| 322 |  | [TAG]E9. Carga de modelos en formato múltiple en las entidades de tipo malla. Carga de varios ficheros para animación. Salida en modo texto | 1d? | 2017-01-31 | 2017-01-31 |  | 8d |
| 323 |  | [TAG]E16. IGC.Cargador de modelos, Movimiento del modelo, Movimiento de luces, Movimiento de cámara | 1d? | 2017-01-31 | 2017-01-31 |  | 8d |
| 324 | 4.2.7 | **[V1]Flocking: comportamiento grupal emergente** | 1d? | 2017-01-31 | 2017-01-31 |  | 8d |
| 325 |  | Estudiar algoritmo | 1d? | 2017-01-31 | 2017-01-31 |  | 8d |
| 326 |  | Programar algoritmo | 1d? | 2017-01-31 | 2017-01-31 |  | 8d |
| 327 |  | Realizar pruebas | 1d? | 2017-01-31 | 2017-01-31 |  | 8d |
| 328 |  | Optimizar código | 1d? | 2017-01-31 | 2017-01-31 |  | 8d |
| 329 | 4.2.8 | **[V1]Comunicación simulada básica entre NPCs(Blackboard)** | 1d? | 2017-01-31 | 2017-01-31 |  | 8d |
| 330 |  | Estudiar algoritmo | 1d? | 2017-01-31 | 2017-01-31 |  | 8d |
| 331 |  | Programar algoritmo | 1d? | 2017-01-31 | 2017-01-31 |  | 8d |
| 332 |  | Realizar pruebas | 1d? | 2017-01-31 | 2017-01-31 |  | 8d |
| 333 |  | Optimizar código | 1d? | 2017-01-31 | 2017-01-31 |  | 8d |
| 334 | 4.2.9 | **[V1]Sistema de memoria de estado y reacción para NPCs** | 1d? | 2017-01-31 | 2017-01-31 |  | 8d |
| 335 |  | Estudiar algoritmo | 1d? | 2017-01-31 | 2017-01-31 |  | 8d |
| 336 |  | Programar algoritmo | 1d? | 2017-01-31 | 2017-01-31 |  | 8d |
| 337 |  | Realizar pruebas | 1d? | 2017-01-31 | 2017-01-31 |  | 8d |
| 338 |  | Optimizar código | 1d? | 2017-01-31 | 2017-01-31 |  | 8d |
| 339 |  | [V2]Mecánicas básicas entidades sin IA. | 1d? | 2017-01-31 | 2017-01-31 |  | 8d |
| 340 | 4.2.11 | **[V2]Implementación del HUD** | 1d? | 2017-01-31 | 2017-01-31 |  | 8d |
| 341 |  | Diseñar HUD | 1d? | 2017-01-31 | 2017-01-31 |  | 8d |
| 342 |  | Implementar HUD | 1d? | 2017-01-31 | 2017-01-31 |  | 8d |
| 343 |  | Realizar pruebas | 1d? | 2017-01-31 | 2017-01-31 |  | 8d |
| 344 |  | Mejorar HUD | 1d? | 2017-01-31 | 2017-01-31 |  | 8d |
| 345 |  | [RV]I2. Modelado de personajes | 1d? | 2017-01-31 | 2017-01-31 |  | 8d |
| 346 |  | [RV]I3. Texturizado de personajes. | 1d? | 2017-01-31 | 2017-01-31 |  | 8d |
| 347 |  | [RV]I4. Captura de movimiento | 1d? | 2017-01-31 | 2017-01-31 |  | 8d |
| 348 |  | [RV]I5. Animación de los personajes | 1d? | 2017-01-31 | 2017-01-31 |  | 8d |
| 349 | 4.3 | **ITERACIÓN 2** | 11d | 2017-02-13 | 2017-02-26 |  |  |
| 350 |  | [PM]Registrar de tiempos y % de realización de tareas en Project. | 1d? | 2017-02-13 | 2017-02-13 |  | 9d |

| ID | WBS | Task | Duration | Start | Finish | Predecessors | Total float | Constraint |
| --- | --- | --- | --- | --- | --- | --- | --- | --- |
| 351 |  | [PM]Comparar la planificación prevista y real en Projects Hito 3 | 1d? | 2017-02-13 | 2017-02-13 |  | 9d |  |
| 352 |  | [PM]Confeccionar informes de Iteración e informe resumen de Hito 3 | 1d? | 2017-02-13 | 2017-02-13 |  | 9d |  |
| 353 |  | [PM]Elaborar la presentación del Hito 3. | 1d? | 2017-02-13 | 2017-02-13 |  | 9d |  |
| 354 |  | [PM]Exponer la presentación del Hito 3. | 1d? | 2017-02-13 | 2017-02-13 |  | 9d |  |
| 355 |  | [TAG]E10. Visualizador OpenGL 4.X de las entidades tipo malla. Shader Básico. Integración con el motor. Sin materiales, texturas, cámara ni luces | 1d? | 2017-02-13 | 2017-02-13 |  | 9d |  |
| 356 |  | [TAG]E11. Visualizador OpenGL 4.X de las entidades tipo malla. Shader básico. Con cámara y luces de varios tipos. Visualización con registro de cámaras y luces. | 1d? | 2017-02-13 | 2017-02-13 |  | 9d |  |
| 357 |  | [TAG]E15. Visualizador OpenGL 4.X con cuatro shaders avanzados | 1d? | 2017-02-13 | 2017-02-13 |  | 9d |  |
| 358 |  | [TAG]E14. Creación de una fachada entre el motor y la aplicación. | 1d? | 2017-02-13 | 2017-02-13 |  | 9d |  |
| 359 |  | [TAG]Optimizaciones del motor | 1d? | 2017-02-13 | 2017-02-13 |  | 9d |  |
| 360 | 4.3.11 | **[V1]Sistema de Navmeshes para pathfinding continuo** | 1d? | 2017-02-13 | 2017-02-13 |  | 9d |  |
| 361 |  | Estudiar algoritmo | 1d? | 2017-02-13 | 2017-02-13 |  | 9d |  |
| 362 |  | Programar algoritmo | 1d? | 2017-02-13 | 2017-02-13 |  | 9d |  |
| 363 |  | Realizar pruebas | 1d? | 2017-02-13 | 2017-02-13 |  | 9d |  |
| 364 |  | Optimizar código | 1d? | 2017-02-13 | 2017-02-13 |  | 9d |  |
| 365 |  | [V1]Sistema de depuración visual in-game de la IA | 1d? | 2017-02-13 | 2017-02-13 |  | 9d |  |
| 366 | 4.3.13 | **[V2]Implementación de clipping** | 1d? | 2017-02-13 | 2017-02-13 |  | 9d |  |
| 367 |  | Estudiar algoritmo | 1d? | 2017-02-13 | 2017-02-13 |  | 9d |  |
| 368 |  | Programar algoritmo | 1d? | 2017-02-13 | 2017-02-13 |  | 9d |  |
| 369 |  | Realizar pruebas | 1d? | 2017-02-13 | 2017-02-13 |  | 9d |  |
| 370 |  | Optimizar código | 1d? | 2017-02-13 | 2017-02-13 |  | 9d |  |
| 371 | 4.3.14 | **[V2]Diseño y creación de niveles** | 1d? | 2017-02-13 | 2017-02-13 |  | 9d |  |
| 372 |  | Diseñar niveles | 1d? | 2017-02-13 | 2017-02-13 |  | 9d |  |
| 373 |  | Modelar niveles | 1d? | 2017-02-13 | 2017-02-13 |  | 9d |  |
| 374 |  | Implementar niveles | 1d? | 2017-02-13 | 2017-02-13 |  | 9d |  |
| 375 |  | Probar niveles | 1d? | 2017-02-13 | 2017-02-13 |  | 9d |  |
| 376 |  | Mejorar niveles | 1d? | 2017-02-13 | 2017-02-13 |  | 9d |  |
| 377 |  | [RV]I4. Rigging de los personajes. | 1d? | 2017-02-13 | 2017-02-13 |  | 9d |  |
| 378 |  | [RV]I4. Captura de movimiento | 1d? | 2017-02-13 | 2017-02-13 |  | 9d |  |
| 379 |  | ITERACIÓN 3 | 10d? | 2017-02-27 | 2017-03-12 |  | 18d | finish no earlier than 2017-03-12 |
| 380 |  | ITERACIÓN 4 | 10d? | 2017-03-13 | 2017-03-26 |  | 8d | finish no earlier than 2017-03-26 |
| 381 |  | ITERACIÓN 5 | 8d? | 2017-03-27 | 2017-04-05 |  | 0d | finish no earlier than 2017-04-05 |
| 382 | 5 | **HITO 4** | 37d? | 2017-04-06 | 2017-05-26 | 313 | 0d |  |
| 383 | 5.1 | **[PM]Detallar plan iteraciones del mes de Abril-Mayo** | 1d? | 2017-04-06 | 2017-04-06 |  | 36d |  |
| 384 |  | Creación de subtareas y precedencias en Project. | 1d? | 2017-04-06 | 2017-04-06 |  | 36d |  |
| 385 |  | Asignar recursos a las tareas en Project. | 1d? | 2017-04-06 | 2017-04-06 |  | 36d |  |
| 386 | 5.2 | **ITERACIÓN 1** | 10d | 2017-04-06 | 2017-04-19 |  |  |  |
| 387 |  | [PM]Registrar de tiempos y % de realización de tareas en Project. | 1d? | 2017-04-06 | 2017-04-06 |  | 9d |  |
| 388 |  | [TAG]Efectos visuales | 1d? | 2017-04-06 | 2017-04-06 |  | 9d |  |
| 389 |  | [V1]Gestión de recursos de IA con Level-of-Detail | 1d? | 2017-04-06 | 2017-04-06 |  | 9d |  |
| 390 |  | [V2]Implementación de sistemas de partículas | 1d? | 2017-04-06 | 2017-04-06 |  | 9d |  |
| 391 |  | [PD]I4. Making of juego/proyecto | 1d? | 2017-04-06 | 2017-04-06 |  | 9d |  |
| 392 |  | [RV]I8. Modelado del entorno y elementos. | 1d? | 2017-04-06 | 2017-04-06 |  | 9d |  |
| 393 | 5.3 | **ITERACIÓN 2** | 10d | 2017-04-20 | 2017-05-03 |  |  |  |
| 394 |  | [PM]Comparar la planificación prevista y real en Projects Hito 4 | 1d? | 2017-04-20 | 2017-04-20 |  | 9d |  |
| 395 |  | [PM]Confeccionar informes de Iteración e informe resumen de Hito 4 | 1d? | 2017-04-20 | 2017-04-20 |  | 9d |  |
| 396 |  | [PMElaborar la presentación del Hito 4 | 1d? | 2017-04-20 | 2017-04-20 |  | 9d |  |
| 397 |  | [PM]Exponer la presentación del Hito 4 | 1d? | 2017-04-20 | 2017-04-20 |  | 9d |  |
| 398 |  | [TAG]Extras | 1d? | 2017-04-20 | 2017-04-20 |  | 9d |  |
| 399 |  | [V1]Sistema de logros y puntuaciones Web | 1d? | 2017-04-20 | 2017-04-20 |  | 9d |  |
| 400 |  | [PD]I5. Créditos | 1d? | 2017-04-20 | 2017-04-20 |  | 9d |  |
| 401 |  | [RV]I9. Texturizado del entorno y elementos. | 1d? | 2017-04-20 | 2017-04-20 |  | 9d |  |
| 402 |  | ITERACIÓN 3 | 10d? | 2017-05-04 | 2017-05-17 |  | 7d | finish no earlier than 2017-05-17 |
| 403 |  | ITERACIÓN 4 | 7d? | 2017-05-18 | 2017-05-26 |  | 0d | finish no earlier than 2017-05-26 |

## Version 2 (data date 2016-10-17, saved 2017-03-14)

Note of the change: Actualización progreso Project

Last finish stays 2017-05-26. Complete tasks 37 → 89.

Added:

| ID | Task | Duration | Start | Finish | Resources |
| --- | --- | --- | --- | --- | --- |
| 84 | [V2]Control del player por motor de físicas 2D, Dynamic o kinematic | 0d? | 2016-11-02 A | 2016-11-02 A | DAVID SEGARRA; HÉCTOR MEDINA |
| 405 | **Como leer este archivo** | 1d? | 2016-09-12 | 2016-09-12 |  |
| 406 | Las tareas están divididas por hitos e iteraciones. Los hitos e iteraciones tienen las fechas de comienzo y fin correctas | 1d? | 2016-09-12 | 2016-09-12 |  |
| 407 | Las tareas tienen fechas de comienzo y fin orientativas. La información real son las horas de trabajo, que están puestas (de manera aproximada) en la columna Duración1 | 1d? | 2016-09-12 | 2016-09-12 |  |
| 408 | Para obtener información más detallada, leer los informes de iteración y el archivo Excel contabilizador de horas | 1d? | 2016-09-12 | 2016-09-12 |  |
| 409 | Si una tarea está pintada de naranja, quiere decir que no se terminó en la iteración indicada, y se siguió trabajando en iteraciones siguientes. En este caso, las horas indicadas en Duración1 se refieren solo a esa iteración | 1d? | 2016-09-12 | 2016-09-12 |  |
| 410 | Si una tarea está pintada de rojo, quiere decir que no se trabajó nada en esa iteración, y se dejó para futuras iteraciones | 1d? | 2016-09-12 | 2016-09-12 |  |
| 411 | La columna Notas está actualmente en construcción. Ignoradla por el momento | 1d? | 2016-09-12 | 2016-09-12 |  |

Changed:

| ID | Task | Start | Finish | Duration | Complete | Total float | Other |
| --- | --- | --- | --- | --- | --- | --- | --- |
| 11 | **HITO 1** |  |  | 47d? → 47d | 26% → 58% | 0d → none |  |
| 12 | **ITERACIÓN 1** |  |  | 10d? → 10d |  |  |  |
| 20 | **ITERACIÓN 2** | 2016-11-03 A → 2016-11-03 |  |  | 47% → 86% |  |  |
| 21 | **PM** |  |  | 10d → 10d? |  |  |  |
| 33 | **V1** | 2016-11-03 A |  |  | 0% → 44% |  |  |
| 40 | **[V1]Documentación de diseño de mecánicas de los NPCs.** | 2016-11-03 A |  |  | 0% → 75% | 6.68d → 0d |  |
| 41 | **Cria de Alien** | 2016-11-03 A | 2016-11-04 A |  | 0% → 100% | 6.68d → none |  |
| 42 | Especificar al detalle mecanicas básicas de Cria de Alien | 2016-11-03 A | 2016-11-03 A |  | 0% → 100% | 6.68d → none |  |
| 43 | Especificar mecanicas especiales de Cria de Alien | 2016-11-03 A | 2016-11-03 A |  | 0% → 100% | 6.68d → none |  |
| 44 | Especificar casos de uso de las mecánicas. | 2016-11-03 A | 2016-11-03 A |  | 0% → 100% | 6.68d → none |  |
| 45 | Dibujar mecanicas de Cria de Alien | 2016-11-03 A | 2016-11-04 A |  | 0% → 100% | 6.68d → none |  |
| 46 | **Alien Soldado** | 2016-11-04 A |  |  | 0% → 50% | 6.68d → 0d |  |
| 47 | Especificar al detalle mecanicas básicas de Alien Soldado | 2016-11-04 A | 2016-11-04 A |  | 0% → 100% | 6.68d → none |  |
| 48 | Especificar mecanicas especiales de Alien Soldado | 2016-11-04 A |  |  | 0% → 50% | 6.68d → 0d |  |
| 51 | **Alien Berserker** | 2016-11-03 A | 2016-11-04 A |  | 0% → 100% | 6.68d → none |  |
| 52 | Especificar al detalle mecanicas básicas de Alien Berserker | 2016-11-03 A | 2016-11-03 A |  | 0% → 100% | 6.68d → none |  |
| 53 | Especificar mecanicas especiales de Alien Berserker | 2016-11-03 A | 2016-11-03 A |  | 0% → 100% | 6.68d → none |  |
| 54 | Especificar casos de uso de las mecánicas. | 2016-11-03 A | 2016-11-03 A |  | 0% → 100% | 6.68d → none |  |
| 55 | Dibujar mecanicas de Alien Berserker | 2016-11-03 A | 2016-11-04 A |  | 0% → 100% | 6.68d → none |  |
| 56 | **Alien Jefe** | 2016-11-04 A |  |  | 0% → 50% | 6.68d → 0d |  |
| 57 | Especificar al detalle mecanicas básicas de Alien Jefe | 2016-11-04 A | 2016-11-04 A |  | 0% → 100% | 6.68d → none |  |
| 58 | Especificar mecanicas especiales de Alien Jefe | 2016-11-04 A |  |  | 0% → 50% | 6.68d → 0d |  |
| 61 | **[V1]Documento de diseño técnico de la arquitectura de IA** | 2016-11-07 A |  |  | 0% → 75% |  |  |
| 62 | Especificar IA de Cria de Alien | 2016-11-07 A | 2016-11-07 A |  | 0% → 100% | 6.71d → none |  |
| 63 | Especificar IA de Alien Soldado | 2016-11-07 A |  |  | 0% → 52% |  |  |
| 64 | Especificar IA de Alien Berserker | 2016-11-07 A | 2016-11-07 A |  | 0% → 100% | 6.68d → none |  |
| 65 | Especificar IA de Alien Jefe | 2016-11-07 A |  |  | 0% → 48% |  |  |
| 66 | **[V1]Documento de diseño de sistemas de toma de decisión** | 2016-11-03 A |  |  | 0% → 75% |  |  |
| 67 | Crear diagrama de toma de decisiones | 2016-11-03 A | 2016-11-03 A |  | 0% → 100% | 8.72d → none |  |
| 68 | Especificar las tomas de decisiones, de Protagonista | 2016-11-03 A | 2016-11-03 A |  | 0% → 100% | 8.72d → none |  |
| 69 | Especificar las tomas de decisiones, de Cria de Alien | 2016-11-03 A | 2016-11-03 A |  | 0% → 100% | 8.72d → none |  |
| 70 | Especificar las tomas de decisiones, de Alien Berserker | 2016-11-03 A |  |  | 0% → 63% |  |  |
| 71 | Especificar las tomas de decisiones, de Alien Soldado | 2016-11-03 A |  |  | 0% → 63% |  |  |
| 73 | **V2** | 2016-11-03 → 2016-11-02 A (-1d) | 2016-11-16 A | 10d → 10d? | 0% → 100% |  |  |
| 74 | **[V2]Mecánicas básicas entidades sin IA.** | 2016-11-09 A | 2016-11-14 A |  | 0% → 100% | 2.09d → none |  |
| 75 | Estudiar mecánicas | 2016-11-09 A | 2016-11-09 A |  | 0% → 100% | 2.09d → none |  |
| 76 | Programar mecánicas | 2016-11-09 A | 2016-11-11 A |  | 0% → 100% | 2.09d → none |  |
| 77 | Realizar pruebas | 2016-11-11 A | 2016-11-14 A |  | 0% → 100% | 2.09d → none |  |
| 78 | Mejorar código | 2016-11-14 A | 2016-11-14 A |  | 0% → 100% | 2.09d → none |  |
| 79 | **[V2]Diseño e implementación de la Arquitectura basada en componentes.** | 2016-11-07 A | 2016-11-16 A | 7.21d → 7.21d? | 0% → 100% |  |  |
| 80 | Realizar esquemas | 2016-11-07 A | 2016-11-10 A |  | 0% → 100% | 1.48d → none |  |
| 81 | Realizar diagrama | 2016-11-10 A | 2016-11-14 A |  | 0% → 100% | 1.48d → none |  |
| 82 | Comprobar errores | 2016-11-14 A | 2016-11-15 A |  | 0% → 100% | 1.48d → none |  |
| 83 | Reediseñar diagrama | 2016-11-15 A | 2016-11-16 A |  | 0% → 100% |  |  |
| 85 | **[V2]Formato propio para la definición de los niveles (documento con la especificación del formato)** | 2016-11-03 A | 2016-11-03 A |  | 0% → 100% | 9d → none | resources DAVID SEGARRA → DAVID SEGARRA [1%] |
| 86 | Leer documento | 2016-11-03 A | 2016-11-03 A |  | 0% → 100% | 9d → none |  |
| 87 | Rellenar documento | 2016-11-03 A | 2016-11-03 A |  | 0% → 100% | 9d → none |  |
| 88 | Analizar documento | 2016-11-03 A | 2016-11-03 A |  | 0% → 100% | 9d → none |  |
| 89 | Actulizar documento | 2016-11-03 A | 2016-11-03 A |  | 0% → 100% | 9d → none |  |
| 91 | [PD]I1. Video con animación del logo de la empresa |  |  |  |  |  | resources none → DAVID SEGARRA; SAMUEL NAVARRO |
| 115 | **ITERACIÓN 3** | 2016-11-17 A → 2016-11-17 | 2016-11-29 → 2016-11-30 (+1d) | 9d? → 10d? | 3% → 66% | 6.62d → none |  |
| 116 | **PM** | 2016-11-17 A |  |  | 0% → 79% | 6.62d → 1d |  |
| 117 | **[PM]Planificación** | 2016-11-22 A | 2016-11-23 A |  | 0% → 100% | 8.05d → none |  |
| 118 | **[PM]Detallar plan iteraciones del mes de Noviembre-Diciembre.** | 2016-11-22 A | 2016-11-23 A |  | 0% → 100% | 8.05d → none |  |
| 119 | Creación subtareas y precedencias en Project. | 2016-11-22 A | 2016-11-23 A |  | 0% → 100% | 8.05d → none |  |
| 120 | Asignar recursos a las tareas en Project. | 2016-11-23 A | 2016-11-23 A |  | 0% → 100% | 8.05d → none |  |
| 121 | **[PM]Seguimiento** | 2016-11-17 A | 2016-11-29 A |  | 0% → 100% | 6.62d → none |  |
| 122 | [PM]Regitrar de tiempos y % de realización de tareas en Project. | 2016-11-17 A | 2016-11-29 A |  | 0% → 100% | 6.62d → none |  |
| 130 | **PD** | 2016-11-17 A → 2016-11-16 A (-1d) | 2016-11-29 A |  | 53% → 100% | 6.92d → none |  |
| 138 | [PD]I2. Cartel juego/proyecto. | 2016-11-17 → 2016-11-16 A (-1d) | 2016-11-17 → 2016-11-16 A (-1d) | 1d? → 0d? | 0% → 100% | 14.62d → none | resources none → HÉCTOR MEDINA [1%] |
| 139 | **V1** | 2016-11-17 A | 2016-11-18 A |  | 0% → 100% | 6.88d → none |  |
| 140 | **[V1]Gestión de estados de la IA con Máquina de Estados.** | 2016-11-17 A | 2016-11-18 A |  | 0% → 100% | 6.88d → none |  |
| 141 | Estudiar algoritmo | 2016-11-17 A | 2016-11-17 A |  | 0% → 100% | 6.88d → none |  |
| 142 | Programar algoritmo | 2016-11-17 A | 2016-11-17 A |  | 0% → 100% | 6.88d → none |  |
| 143 | Realizar pruebas | 2016-11-17 A | 2016-11-17 A |  | 0% → 100% | 6.88d → none |  |
| 144 | Optimizar código | 2016-11-18 A | 2016-11-18 A |  | 0% → 100% | 6.88d → none |  |
| 145 | **V2** | 2016-11-17 A |  |  | 0% → 64% | 8.05d → 3.38d |  |
| 146 | [V2]Diseño e implementación de la Arquitectura basada en componentes |  |  | 1d? → 0d? |  | 14.62d → 10d | resources none → JAUME LLORET |
| 147 | [V2]Mecánicas básicas entidades sin IA | 2016-11-17 A | 2016-11-17 A | 1d? → 0d? | 0% → 100% | 14.62d → none | resources none → SAMUEL NAVARRO |
| 148 | **[V2]Control del player por motor de físicas 2D, Dynamic o kinematic** | 2016-11-17 A | 2016-11-22 A |  | 0% → 100% | 8.05d → none |  |

| ID | Task | Start | Finish | Duration | Complete | Total float | Other |
| --- | --- | --- | --- | --- | --- | --- | --- |
| 149 | Incluir motor de físicas | 2016-11-17 A | 2016-11-17 A |  | 0% → 100% | 8.05d → none |  |
| 150 | Programar mecánicas | 2016-11-18 A | 2016-11-21 A |  | 0% → 100% | 8.05d → none |  |
| 151 | Realizar pruebas | 2016-11-21 A | 2016-11-21 A |  | 0% → 100% | 8.05d → none |  |
| 152 | Mejorar código | 2016-11-21 A | 2016-11-22 A |  | 0% → 100% | 8.05d → none |  |
| 153 | [V2]Creación de un cargador de niveles. |  |  | 1d? → 0d? |  | 14.62d → 10d | resources none → DAVID SEGARRA; HÉCTOR MEDINA |
| 154 | **[V2]Implementación de cámara de seguimiento.** | 2016-11-22 A | 2016-11-25 A |  | 0% → 100% | 9d → none |  |
| 155 | Estudiar tipos de cámaras | 2016-11-22 A | 2016-11-23 A |  | 0% → 100% | 9d → none |  |
| 156 | Programar cámara | 2016-11-23 A | 2016-11-24 A |  | 0% → 100% | 9d → none |  |
| 157 | Realizar pruebas | 2016-11-24 A | 2016-11-24 A |  | 0% → 100% | 9d → none |  |
| 158 | Optimizar código | 2016-11-25 A | 2016-11-25 A |  | 0% → 100% | 9d → none |  |
| 173 | [TAG]E1. Visualización: visualizador OpenGL 4.X simple, con datos por programa. Shader Básico. |  |  | 1d? → 0d? |  | 9d → 10d | resources none → PABLO TORREGROSA |
| 180 | **[PD]I2. Cartel juego/proyecto.** |  |  |  |  |  | resources none → DAVID SEGARRA; HÉCTOR MEDINA; SAMUEL NAVARRO |
| 182 | Seleccionar protipos |  |  |  |  |  | resources DAVID SEGARRA; HÉCTOR MEDINA; SAMUEL NAVARRO → none |
| 183 | Diseñar de elementos básicos con Illustrator |  |  |  |  |  | resources DAVID SEGARRA; HÉCTOR MEDINA; SAMUEL NAVARRO → none |
| 184 | Diseñar y componer diferentes elementos con Photoshop |  |  |  |  |  | resources DAVID SEGARRA; HÉCTOR MEDINA; SAMUEL NAVARRO → none |
| 196 | [V1]Gestión de estados de la IA con Máquina de Estados. |  |  | 1d? → 0d? |  | 9d → 10d | resources none → IVAN PINA; PABLO TORREGROSA |
| 197 | **[V1]Sistema de toma de decisiones con Behaviour Trees** |  |  |  |  |  | resources none → IVAN PINA; PABLO TORREGROSA |
| 203 | [V2]Mecánicas básicas entidades sin IA. |  |  | 1d? → 0d? |  | 9d → 10d | resources none → HÉCTOR MEDINA |
| 204 | [V2]Diseño e implementación de la Arquitectura basada en componentes. |  |  | 1d? → 0d? |  | 9d → 10d | resources none → JAUME LLORET |
| 205 | [V2]Control del player por motor de físicas 2D, Dynamic o kinematic |  |  | 1d? → 0d? |  | 9d → 10d | resources none → HÉCTOR MEDINA; DAVID SEGARRA; SAMUEL NAVARRO |
| 206 | **[V2]Creación de un cargador de niveles.** |  |  |  |  |  | resources none → DAVID SEGARRA; HÉCTOR MEDINA |
| 226 | **ITERACIÓN 5** |  |  |  | 7% → 58% |  |  |
| 228 | [V2]Diseño e implementación de la Arquitectura basada en componentes. |  |  |  |  |  | resources none → JAUME LLORET |
| 229 | [V2]Implementación de cámara de seguimiento. |  |  | 1d? → 0d? |  | 6d → 7d | resources none → DAVID SEGARRA |
| 230 | [V2]Mecánicas básicas entidades sin IA. |  |  | 1d? → 0d? |  | 6d → 7d | resources none → DAVID SEGARRA |
| 231 | [V2]Mecánicas de acción. |  |  |  |  |  | resources none → DAVID SEGARRA |
| 233 | [V1]Sistema de toma de decisiones con Behaviour Trees |  |  |  |  |  | resources none → IVAN PINA; PABLO TORREGROSA |
| 234 | [V1]Gestión de estados de la IA con Máquina de Estados. |  |  |  |  |  | resources none → HÉCTOR MEDINA |
| 235 | **PD** |  | 2016-12-15 A |  | 50% → 100% | 6d → none |  |
| 236 | [PD]I1. Video con animación del logo de la empresa |  |  |  |  |  | resources none → SAMUEL NAVARRO |
| 237 | [PD]I2. Cartel juego/proyecto. | 2016-12-15 A | 2016-12-15 A | 1d? → 0d? | 0% → 100% | 6d → none | resources none → SAMUEL NAVARRO |
| 238 | **PM** | 2016-12-15 A |  |  | 0% → 86% |  |  |
| 239 | **[PM]Planificación** | 2016-12-15 A | 2016-12-15 A |  | 0% → 100% | 6d → none |  |
| 240 | **[PM]Detallar plan iteraciones del mes de Noviembre-Diciembre.** | 2016-12-15 A | 2016-12-15 A |  | 0% → 100% | 6d → none |  |
| 241 | Creación subtareas y precedencias en Project. | 2016-12-15 A | 2016-12-15 A |  | 0% → 100% | 6d → none |  |
| 242 | Asignar recursos a las tareas en Project. | 2016-12-15 A | 2016-12-15 A |  | 0% → 100% | 6d → none |  |
| 243 | **[PM]Seguimiento** | 2016-12-15 A | 2016-12-15 A |  | 0% → 100% | 6d → none |  |
| 244 | [PM]Regitrar de tiempos y % de realización de tareas en Project. | 2016-12-15 A | 2016-12-15 A |  | 0% → 100% | 6d → none |  |
| 245 | [PM]Elaborar la presentación del Hito 1. | 2016-12-15 A | 2016-12-15 A |  | 0% → 100% | 6d → none |  |
| 246 | [PM]Exponer la presentación del Hito 1. | 2016-12-15 A | 2016-12-15 A |  | 0% → 100% | 6d → none |  |
| 247 | [PM]Confeccionar informes de Iteración e informe resumen de Hito 1. | 2016-12-15 A | 2016-12-15 A |  | 0% → 100% | 6d → none |  |
| 259 | [TAG]E1. Visualización: visualizador OpenGL 4.X simple, con datos por programa. Shader Básico. |  |  |  |  |  | resources none → PABLO TORREGROSA |

## Version 3 (data date 2016-10-17, saved 2017-03-14)

Note of the change: Otra actualización de progreso Project

Last finish stays 2017-05-26.

Added:

| ID | Task | Duration | Start | Finish | Resources |
| --- | --- | --- | --- | --- | --- |
| 278 | [V1]Sistema de Navmeshes para pathfinding continuo | 1d? | 2016-12-26 | 2016-12-26 |  |
| 299 | [V2]Implementación del HUD | 0d? | 2016-12-26 | 2016-12-26 | PABLO TORREGROSA |
| 341 | [V1]Sistema de Navmeshes para pathfinding continuo | 1d? | 2017-01-31 | 2017-01-31 | DAVID SEGARRA |
| 342 | [V2]Diseño y creación de niveles | 0d? | 2017-01-31 | 2017-01-31 | DAVID SEGARRA |
| 381 | [RV]I8. Modelado del entorno y elementos. | 2d? | 2017-02-13 | 2017-02-14 | IVAN PINA [50%]; PABLO TORREGROSA [50%] |
| 382 | [RV]I9. Texturizado del entorno y elementos. | 2d? | 2017-02-13 | 2017-02-14 | IVAN PINA [50%]; PABLO TORREGROSA [50%] |
| 386 | [V1]Sistema de Navmeshes para pathfinding continuo | 0d? | 2017-02-27 | 2017-02-27 | DAVID SEGARRA |
| 387 | [V1]Gestión de estados de la IA con Máquina de Estados. | 1d? | 2017-02-27 | 2017-02-27 | DAVID SEGARRA |
| 388 | [PM] Aplicación del modelo EVA en Project | 0d? | 2017-02-27 | 2017-02-27 | IVAN PINA |

Removed: 279 [V2]Mecánicas de acción.

Changed:

| ID | Task | Duration | Total float | Other |
| --- | --- | --- | --- | --- |
| 261 | [V1]Gestión de estados de la IA con Máquina de Estados. |  |  | resources none → DAVID SEGARRA; HÉCTOR MEDINA |
| 262 | [V1]Sistema de toma de decisiones con Behaviour Trees |  |  | resources none → IVAN PINA |
| 268 | **[V1]Sistema de percepción sensorial.** |  |  | resources none → DAVID SEGARRA |
| 281 | [V2]Mecánicas básicas entidades sin IA. | 1d? → 0d? | 25d → 26d | resources none → IVAN PINA |
| 282 | **[V2]Powers-up y elementos adicionales** |  |  | resources none → DAVID SEGARRA |
| 300 | **[V2]Implementación de menús.** |  |  | resources none → SAMUEL NAVARRO |
| 343 | [V2]Mecánicas básicas entidades sin IA. |  |  | resources none → IVAN PINA |
| 385 | **ITERACIÓN 3** | 10d? → 11d | 18d → none | constraint finish no earlier than 2017-03-12 → none |

## Version 4 (data date 2016-10-17, saved 2017-03-21)

Note of the change: Introducción de horas aproximadas

Last finish stays 2017-05-26.

Added:

| ID | Task | Duration | Start | Finish |
| --- | --- | --- | --- | --- |
| 420 | Las duraciones indicadas en Notas solo importan para tareas individuales. Ignorar las Notas de apartado de asignatura, de iteración y de hito.Debido a la repetición de tareas en diversas iteraciones, no da información útil. | 1d? | 2016-09-12 | 2016-09-12 |

Changed:

| ID | Task | Other |
| --- | --- | --- |
| 419 | La columna Notas tiene las duraciones aproximadas de las tareas según la planificación dada por los profesores en la plantilla de planificación del ABP | was named La columna Notas está actualmente en construcción. Ignoradla por el momento |

## Version 5 (data date 2016-10-17, saved 2017-03-28)

Note of the change: Actualizando horas hito 2 en Project

Last finish stays 2017-05-26. Complete tasks 89 → 134.

Added:

| ID | Task | Duration | Start | Finish | Resources |
| --- | --- | --- | --- | --- | --- |
| 211 | [V2]Implementación de menús. | 0d? | 2016-12-01 | 2016-12-01 | SAMUEL NAVARRO |
| 257 | **PM** | 1d? | 2016-12-26 | 2016-12-26 |  |
| 261 | **TAG** | 1d? | 2016-12-26 A | 2016-12-26 |  |
| 264 | **V1** | 1d? | 2016-12-26 | 2016-12-26 |  |
| 284 | **V2** | 1d? | 2016-12-26 | 2016-12-26 |  |
| 317 | **RV** | 1d? | 2016-12-26 | 2016-12-26 |  |
| 326 | **TAG** | 1d? | 2017-01-31 A | 2017-01-31 |  |
| 331 | [TAG]E8. Tipos de datos para entidades de tipo animación. Salida en modo texto | 1d? | 2017-01-31 A | 2017-01-31 A | JAUME LLORET |
| 334 | **V1** | 1d? | 2017-01-31 | 2017-01-31 |  |
| 351 | **V2** | 1d? | 2017-01-31 | 2017-01-31 |  |
| 359 | **RV** | 1d? | 2017-01-31 | 2017-01-31 |  |
| 365 | **PM** | 1d? | 2017-02-13 | 2017-02-13 |  |
| 371 | **TAG** | 1d? | 2017-02-13 A | 2017-02-13 |  |
| 377 | **V1** | 1d? | 2017-02-13 | 2017-02-13 |  |
| 384 | **V2** | 1d? | 2017-02-13 | 2017-02-13 |  |
| 396 | **RV** | 2d? | 2017-02-13 | 2017-02-14 |  |
| 402 | **TAG** | 0d? | 2017-02-27 A | 2017-02-27 |  |
| 403 | [TAG]E4. Tipos de datos para entidades de tipo nodo. Salida en modo texto | 0d? | 2017-02-27 A | 2017-02-27 A | JAUME LLORET |
| 404 | [TAG]E5. Tipos de datos para entidades de tipo transformación. Salida en modo texto | 0d? | 2017-02-27 A | 2017-02-27 A | JAUME LLORET |
| 405 | [TAG]E6.Tipos de datos para entidades de tipo cámara y luz. Salida en modo texto | 0d? | 2017-02-27 A | 2017-02-27 | JAUME LLORET; PABLO TORREGROSA |
| 406 | [TAG]E7. Tipos de datos para entidades de tipo malla. Salida en modo texto | 0d? | 2017-02-27 A | 2017-02-27 A | JAUME LLORET |
| 407 | [TAG]E8. Tipos de datos para entidades de tipo animación. Salida en modo texto | 0d? | 2017-02-27 A | 2017-02-27 A | JAUME LLORET |
| 408 | [TAG]E10. Visualizador OpenGL 4.X de las entidades tipo malla. Shader Básico. Integración con el motor. Sin materiales, texturas, cámara ni luces | 0d? | 2017-02-27 | 2017-02-27 | JAUME LLORET |
| 409 | [TAG]E14. Creación de una fachada entre el motor y la aplicación. | 0d? | 2017-02-27 | 2017-02-27 | JAUME LLORET; PABLO TORREGROSA |
| 410 | [TAG]E2. Gestor de recursos: Parser de objetos en multiples formatos, salida en modo texto. | 0d? | 2017-02-27 | 2017-02-27 | JAUME LLORET; PABLO TORREGROSA |
| 411 | **V1** | 0d? | 2017-02-27 | 2017-02-27 |  |
| 414 | **V2** | 1d? | 2017-02-27 A | 2017-02-27 |  |
| 415 | [V2]Powers-up y elementos adicionales | 0d? | 2017-02-27 | 2017-02-27 | DAVID SEGARRA |
| 416 | [V2]Mecánicas básicas entidades sin IA. | 0d? | 2017-02-27 | 2017-02-27 | DAVID SEGARRA; HÉCTOR MEDINA |
| 417 | [V2]Integración de librería para GUI. | 1d? | 2017-02-27 A | 2017-02-27 A | SAMUEL NAVARRO |
| 418 | [V2]Implementación de menús. | 0d? | 2017-02-27 | 2017-02-27 | SAMUEL NAVARRO |
| 419 | [V2]Diseño y creación de niveles | 0d? | 2017-02-27 A | 2017-02-27 A | DAVID SEGARRA; HÉCTOR MEDINA |
| 420 | **RV** | 0d? | 2017-02-27 | 2017-02-27 |  |
| 421 | [RV]I2. Modelado de personajes | 0d? | 2017-02-27 | 2017-02-27 | SAMUEL NAVARRO |
| 422 | [RV]I8. Modelado del entorno y elementos. | 0d? | 2017-02-27 | 2017-02-27 | HÉCTOR MEDINA |
| 425 | [V1]Sistema de percepción sensorial. | 0d? | 2017-01-30 | 2017-01-30 | DAVID SEGARRA |
| 426 | [RV]I8. Modelado del entorno y elementos. | 0d? | 2017-01-30 | 2017-01-30 | IVAN PINA |
| 427 | [TAG]E6.Tipos de datos para entidades de tipo cámara y luz. Salida en modo texto | 0d? | 2017-01-30 | 2017-01-30 | PABLO TORREGROSA |
| 428 | **V2** | 0d? | 2017-01-30 | 2017-01-30 |  |
| 429 | [V2]Mecánicas de acción. | 0d? | 2017-01-30 | 2017-01-30 | DAVID SEGARRA |
| 430 | [V2]Powers-up y elementos adicionales | 0d? | 2017-01-30 | 2017-01-30 | DAVID SEGARRA |
| 431 | [V2]Diseño y creación de niveles | 0d? | 2017-01-30 | 2017-01-30 | HÉCTOR MEDINA |
| 432 | [V2]Mecánicas básicas entidades sin IA. | 0d? | 2017-01-30 | 2017-01-30 | HÉCTOR MEDINA |
| 446 | **PM** | 1d? | 2017-04-20 | 2017-04-20 |  |

Changed:

| ID | Task | Start | Finish | Complete | Total float | Other |
| --- | --- | --- | --- | --- | --- | --- |
| 11 | **HITO 1** |  |  | 58% → 69% |  |  |
| 20 | **ITERACIÓN 2** |  |  | 86% → 89% |  |  |
| 33 | **V1** |  |  | 44% → 59% |  |  |
| 40 | **[V1]Documentación de diseño de mecánicas de los NPCs.** |  | 2016-11-07 A | 75% → 100% | 0d → none |  |
| 46 | **Alien Soldado** |  | 2016-11-07 A | 50% → 100% | 0d → none |  |
| 48 | Especificar mecanicas especiales de Alien Soldado |  | 2016-11-04 A | 50% → 100% | 0d → none |  |
| 49 | Especificar casos de uso de las mecánicas. | 2016-11-04 A | 2016-11-04 A | 0% → 100% | 0d → none |  |
| 50 | Dibujar mecanicas de Alien Soldado | 2016-11-04 A | 2016-11-07 A | 0% → 100% | 0d → none |  |
| 56 | **Alien Jefe** |  | 2016-11-07 A | 50% → 100% | 0d → none |  |
| 58 | Especificar mecanicas especiales de Alien Jefe |  | 2016-11-04 A | 50% → 100% | 0d → none |  |
| 59 | Especificar casos de uso de las mecánicas. | 2016-11-04 A | 2016-11-04 A | 0% → 100% | 0d → none |  |
| 60 | Dibujar mecanicas de Alien Jefe | 2016-11-04 A | 2016-11-07 A | 0% → 100% | 0d → none |  |
| 61 | **[V1]Documento de diseño técnico de la arquitectura de IA** |  | 2016-11-08 A | 75% → 100% | 6.68d → none |  |
| 63 | Especificar IA de Alien Soldado |  | 2016-11-08 A | 52% → 100% | 6.71d → none |  |
| 65 | Especificar IA de Alien Jefe |  | 2016-11-08 A | 48% → 100% | 6.68d → none |  |
| 66 | **[V1]Documento de diseño de sistemas de toma de decisión** |  | 2016-11-04 A | 75% → 100% | 8.72d → none |  |
| 70 | Especificar las tomas de decisiones, de Alien Berserker |  | 2016-11-04 A | 63% → 100% | 8.72d → none |  |
| 71 | Especificar las tomas de decisiones, de Alien Soldado |  | 2016-11-04 A | 63% → 100% | 8.72d → none |  |
| 72 | Especificar las tomas de decisiones, de Alien Jefe | 2016-11-04 A | 2016-11-04 A | 0% → 100% | 8.72d → none |  |
| 115 | **ITERACIÓN 3** |  |  | 66% → 72% |  |  |
| 145 | **V2** |  |  | 64% → 83% |  |  |
| 146 | [V2]Diseño e implementación de la Arquitectura basada en componentes | 2016-11-17 A | 2016-11-17 A | 0% → 100% | 10d → none |  |
| 148 | **[V2]Control del player por motor de físicas 2D, Dynamic o kinematic** |  | 2016-11-22 A → 2016-11-22 | 100% → 50% | none → 6.5d |  |
| 150 | Programar mecánicas |  | 2016-11-21 A → 2016-11-21 | 100% → 60% | none → 6.5d |  |
| 151 | Realizar pruebas | 2016-11-21 A → 2016-11-21 | 2016-11-21 A → 2016-11-21 | 100% → 0% | none → 6.5d |  |
| 152 | Mejorar código | 2016-11-21 A → 2016-11-21 | 2016-11-22 A → 2016-11-22 | 100% → 0% | none → 6.5d |  |
| 159 | **[V2]Mecánicas de acción.** | 2016-11-18 A | 2016-11-23 A | 0% → 100% | 1.25d → none |  |
| 160 | Estudiar mecánicas | 2016-11-18 A | 2016-11-18 A | 0% → 100% | 1.25d → none |  |
| 161 | Programar mecánicas | 2016-11-18 A | 2016-11-22 A | 0% → 100% | 1.25d → none |  |
| 162 | Realizar pruebas | 2016-11-22 A | 2016-11-23 A | 0% → 100% | 1.25d → none |  |
| 163 | Mejorar código | 2016-11-23 A | 2016-11-23 A | 0% → 100% | 1.25d → none |  |
| 164 | **ITERACIÓN 4** | 2016-12-01 A |  | 0% → 29% |  |  |
| 165 | **PM** | 2016-12-01 A | 2016-12-01 A | 0% → 100% | 9d → none |  |
| 166 | **[PM]Planificación** | 2016-12-01 A | 2016-12-01 A | 0% → 100% | 9d → none |  |
| 167 | **[PM]Detallar plan iteraciones del mes de Noviembre-Diciembre.** | 2016-12-01 A | 2016-12-01 A | 0% → 100% | 9d → none |  |
| 168 | Creación subtareas y precedencias en Project. | 2016-12-01 A | 2016-12-01 A | 0% → 100% | 9d → none |  |
| 169 | Asignar recursos a las tareas en Project. | 2016-12-01 A | 2016-12-01 A | 0% → 100% | 9d → none |  |
| 170 | **[PM]Seguimiento** | 2016-12-01 A | 2016-12-01 A | 0% → 100% | 9d → none |  |
| 171 | [PM]Regitrar de tiempos y % de realización de tareas en Project. | 2016-12-01 A | 2016-12-01 A | 0% → 100% | 9d → none |  |
| 179 | **PD** | 2016-12-01 A |  | 0% → 99% | 9d → 0d |  |
| 180 | **[PD]I2. Cartel juego/proyecto.** | 2016-12-01 A |  | 0% → 99% | 9d → 0d |  |
| 181 | Diseñar prototipos | 2016-12-01 A | 2016-12-01 A | 0% → 100% | 9d → none |  |
| 182 | Seleccionar protipos | 2016-12-01 A | 2016-12-01 A | 0% → 100% | 9d → none |  |
| 183 | Diseñar de elementos básicos con Illustrator | 2016-12-01 A | 2016-12-01 A | 0% → 100% | 9d → none |  |
| 184 | Diseñar y componer diferentes elementos con Photoshop | 2016-12-01 A | 2016-12-01 A | 0% → 100% | 9d → none |  |
| 202 | **V2** | 2016-12-01 A |  | 0% → 26% |  |  |
| 203 | [V2]Mecánicas básicas entidades sin IA. | 2016-12-01 A | 2016-12-01 A | 0% → 100% | 10d → none |  |
| 205 | [V2]Control del player por motor de físicas 2D, Dynamic o kinematic | 2016-12-01 A | 2016-12-01 A | 0% → 100% | 10d → none |  |
| 206 | **[V2]Creación de un cargador de niveles.** | 2016-12-01 A |  | 0% → 99% | 5.62d → 0d |  |
| 207 | Estudiar cargador de niveles | 2016-12-01 A | 2016-12-01 A | 0% → 100% | 5.62d → none |  |
| 208 | Programar cargador de niveles | 2016-12-01 A | 2016-12-06 A | 0% → 100% | 5.62d → none |  |
| 209 | Realizar pruebas | 2016-12-06 A | 2016-12-06 A | 0% → 100% | 5.62d → none |  |
| 210 | Optimizar código | 2016-12-06 A | 2016-12-07 A | 0% → 100% | 5.62d → none |  |
| 227 | **ITERACIÓN 5** |  |  | 58% → 67% |  |  |
| 228 | **V2** | 2016-12-15 A |  | 0% → 50% |  |  |
| 232 | [V2]Mecánicas de acción. | 2016-12-15 A | 2016-12-15 A | 0% → 100% | 6d → none |  |
| 250 | **HITO 2** | 2016-12-26 A |  | 0% → 9% |  |  |
| 251 | **[PM]Detallar plan iteraciones del mes de Enero** | 2016-12-26 A | 2016-12-26 A | 0% → 100% | 25d → none |  |
| 252 | Creación de subtareas y precedencias en Project. | 2016-12-26 A | 2016-12-26 A | 0% → 100% | 25d → none |  |
| 253 | Asignar recursos a las tareas en Project. | 2016-12-26 A | 2016-12-26 A | 0% → 100% | 25d → none |  |
| 254 | [PM]Revisar especifiación del proyecto. | 2016-12-26 A | 2016-12-26 A | 0% → 100% | 25d → none |  |
| 255 | [PM]Reestimar el proyecto | 2016-12-26 A | 2016-12-26 A | 0% → 100% | 25d → none |  |
| 256 | **ITERACIÓN 1** | 2016-12-26 A |  | 0% → 2% |  |  |
| 262 | [TAG]E1. Visualización: visualizador OpenGL 4.X simple, con datos por programa. Shader Básico. | 2016-12-26 A | 2016-12-26 A | 0% → 100% | 25d → none |  |
| 321 | **HITO 3** | 2017-01-31 → 2017-01-30 A (-1d) |  | 0% → 10% |  |  |
| 325 | **ITERACIÓN 1** | 2017-01-31 A |  | 0% → 17% |  |  |
| 327 | [TAG]E4. Tipos de datos para entidades de tipo nodo. Salida en modo texto | 2017-01-31 A | 2017-01-31 A | 0% → 100% | 8d → none | was named [TAG]E4. Tipos de datos para entidades de tipo transformacion. Salida en modo texto; resources none → JAUME LLORET |
| 328 | [TAG]E5. Tipos de datos para entidades de tipo transformación. Salida en modo texto | 2017-01-31 A | 2017-01-31 A | 0% → 100% | 8d → none | was named [TAG]E5. Tipos de datos para entidades de tipo malla. Salida en modo texto; resources none → JAUME LLORET |
| 329 | [TAG]E6.Tipos de datos para entidades de tipo cámara y luz. Salida en modo texto | 2017-01-31 A | 2017-01-31 A | 0% → 100% | 8d → none | resources none → JAUME LLORET |
| 330 | [TAG]E7. Tipos de datos para entidades de tipo malla. Salida en modo texto | 2017-01-31 A | 2017-01-31 A | 0% → 100% | 8d → none | was named [TAG]E7. Tipos de datos para entidades de tipo animación. Salida en modo texto; resources none → JAUME LLORET |

| ID | Task | Start | Finish | Duration | Complete | Total float | Other |
| --- | --- | --- | --- | --- | --- | --- | --- |
| 364 | **ITERACIÓN 2** | 2017-02-13 A |  |  | 0% → 3% |  |  |
| 372 | [TAG]E10. Visualizador OpenGL 4.X de las entidades tipo malla. Shader Básico. Integración con el motor. Sin materiales, texturas, cámara ni luces | 2017-02-13 A | 2017-02-13 A |  | 0% → 100% | 9d → none | resources none → JAUME LLORET |
| 401 | **ITERACIÓN 3** | 2017-02-27 A |  |  | 0% → 99% |  |  |
| 412 | [V1]Sistema de Navmeshes para pathfinding continuo |  |  |  |  |  | resources DAVID SEGARRA → DAVID SEGARRA; HÉCTOR MEDINA |
| 413 | [V1]Gestión de estados de la IA con Máquina de Estados. |  |  | 1d? → 0d? |  | 9d → 10d | resources DAVID SEGARRA → DAVID SEGARRA; HÉCTOR MEDINA |
| 423 | [PM] Aplicación del modelo EVA en Project | 2017-02-27 A | 2017-02-27 A |  | 0% → 100% | 10d → none |  |
| 424 | **ITERACIÓN 4** | 2017-03-13 → 2017-01-30 (-42d) | 2017-03-26 → 2017-01-30 (-55d) | 10d? → 0d? |  | 8d → 47d | constraint finish no earlier than 2017-03-26 → none |

## Version 6 (data date 2016-10-17, saved 2017-03-28)

Note of the change: Borrador informe Hito 2

Last finish stays 2017-05-26.

Added:

| ID | Task | Duration | Start | Finish |
| --- | --- | --- | --- | --- |
| 353 | [V2]Integración de librería para GUI. | 1d? | 2017-01-31 | 2017-01-31 |
| 354 | [V2]Implementación de menús. | 1d? | 2017-01-31 | 2017-01-31 |

Changed:

| ID | Task | Complete |
| --- | --- | --- |
| 325 | **ITERACIÓN 1** | 17% → 16% |

## Version 7 (data date 2016-10-17, saved 2017-03-30)

Note of the change: Pequeña correción Project

Last finish stays 2017-05-26.

Changed:

| ID | Task | Start | Finish | Duration | Total float |
| --- | --- | --- | --- | --- | --- |
| 321 | **HITO 3** | 2017-01-30 A → 2017-01-31 A (+1d) |  |  |  |
| 426 | **ITERACIÓN 4** | 2017-01-30 → 2017-03-13 (+42d) | 2017-01-30 → 2017-03-26 (+55d) | 0d? → 11d | 47d → none |
| 427 | [V1]Sistema de percepción sensorial. | 2017-01-30 → 2017-03-13 (+42d) | 2017-01-30 → 2017-03-13 (+42d) |  | 47d → 10d |
| 428 | [RV]I8. Modelado del entorno y elementos. | 2017-01-30 → 2017-03-13 (+42d) | 2017-01-30 → 2017-03-13 (+42d) |  | 47d → 10d |
| 429 | [TAG]E6.Tipos de datos para entidades de tipo cámara y luz. Salida en modo texto | 2017-01-30 → 2017-03-13 (+42d) | 2017-01-30 → 2017-03-13 (+42d) |  | 47d → 10d |
| 430 | **V2** | 2017-01-30 → 2017-03-13 (+42d) | 2017-01-30 → 2017-03-13 (+42d) |  | 47d → 10d |
| 431 | [V2]Mecánicas de acción. | 2017-01-30 → 2017-03-13 (+42d) | 2017-01-30 → 2017-03-13 (+42d) |  | 47d → 10d |
| 432 | [V2]Powers-up y elementos adicionales | 2017-01-30 → 2017-03-13 (+42d) | 2017-01-30 → 2017-03-13 (+42d) |  | 47d → 10d |
| 433 | [V2]Diseño y creación de niveles | 2017-01-30 → 2017-03-13 (+42d) | 2017-01-30 → 2017-03-13 (+42d) |  | 47d → 10d |
| 434 | [V2]Mecánicas básicas entidades sin IA. | 2017-01-30 → 2017-03-13 (+42d) | 2017-01-30 → 2017-03-13 (+42d) |  | 47d → 10d |

## Version 8 (data date 2016-10-17, saved 2017-04-04)

Note of the change: Actualización informes PM

Last finish stays 2017-05-26.

Added:

| ID | Task | Duration | Start | Finish | Resources |
| --- | --- | --- | --- | --- | --- |
| 366 | [TAG]E4. Tipos de datos para entidades de tipo nodo. Salida en modo texto | 0d? | 2017-02-13 | 2017-02-13 | JAUME LLORET |
| 367 | [TAG]E5. Tipos de datos para entidades de tipo transformación. Salida en modo texto | 0d? | 2017-02-13 | 2017-02-13 | JAUME LLORET |
| 368 | [TAG]E7. Tipos de datos para entidades de tipo malla. Salida en modo texto | 0d? | 2017-02-13 | 2017-02-13 | JAUME LLORET |
| 420 | **PM** | 1d? | 2017-02-27 A | 2017-02-27 |  |
| 421 | [PM]Comparar la planificación prevista y real en Project Hito 3 | 1d? | 2017-02-27 | 2017-02-27 |  |
| 433 | **PM** | 1d? | 2017-01-31 | 2017-01-31 |  |

Removed: 356 [V2]Implementación del HUD; 357 Diseñar HUD; 358 Implementar HUD; 359 Realizar pruebas; 360 Mejorar HUD

Changed:

| ID | Task | Start | Finish | Duration | Complete | Total float | Other |
| --- | --- | --- | --- | --- | --- | --- | --- |
| 321 | **HITO 3** |  | 2017-04-05 → 2017-03-26 (-10d) | 47d? → 39d? | 10% → 12% | 0d → 8d |  |
| 325 | **ITERACIÓN 1** |  |  |  | 16% → 20% |  |  |
| 350 | [V1]Sistema de Navmeshes para pathfinding continuo |  |  | 1d? → 0d? |  | 8d → 9d | resources DAVID SEGARRA → DAVID SEGARRA; SAMUEL NAVARRO |
| 353 | [V2]Integración de librería para GUI. |  |  |  |  |  | resources none → SAMUEL NAVARRO |
| 354 | [V2]Implementación de menús. |  |  | 1d? → 0d? |  | 8d → 9d | resources none → SAMUEL NAVARRO |
| 361 | **ITERACIÓN 2** |  |  |  | 3% → 4% |  |  |
| 364 | [PM]Comparar la planificación prevista y real en Projects Hito 3 |  |  |  |  |  | resources none → IVAN PINA |
| 398 | **ITERACIÓN 3** |  |  |  | 99% → 50% |  |  |
| 432 | **ITERACIÓN 5** | 2017-03-27 → 2017-01-31 (-55d) | 2017-04-05 → 2017-01-31 (-64d) | 8d? → 1d? |  | 0d → 46d | constraint finish no earlier than 2017-04-05 → none |
| 434 | [PM]Confeccionar informes de Iteración e informe resumen de Hito 3 | 2017-02-13 → 2017-01-31 (-13d) | 2017-02-13 → 2017-01-31 (-13d) |  |  | 9d → 46d |  |
| 435 | [PM]Elaborar la presentación del Hito 3. | 2017-02-13 → 2017-01-31 (-13d) | 2017-02-13 → 2017-01-31 (-13d) |  |  | 9d → 46d |  |
| 436 | [PM]Exponer la presentación del Hito 3. | 2017-02-13 → 2017-01-31 (-13d) | 2017-02-13 → 2017-01-31 (-13d) |  |  | 9d → 46d |  |
| 437 | **HITO 4** | 2017-04-06 → 2017-03-27 (-10d) |  | 37d? → 45d? |  |  |  |
| 438 | **[PM]Detallar plan iteraciones del mes de Abril-Mayo** | 2017-04-06 → 2017-03-27 (-10d) | 2017-04-06 → 2017-03-27 (-10d) |  |  | 36d → 44d |  |
| 439 | Creación de subtareas y precedencias en Project. | 2017-04-06 → 2017-03-27 (-10d) | 2017-04-06 → 2017-03-27 (-10d) |  |  | 36d → 44d |  |
| 440 | Asignar recursos a las tareas en Project. | 2017-04-06 → 2017-03-27 (-10d) | 2017-04-06 → 2017-03-27 (-10d) |  |  | 36d → 44d |  |
